# TT_ProjectSchedule

How a schedule from MS Project changed from version to version. A marks actual dates.

## Version 1 (saved 2015-05-24)

Note of the change: Update Plan/FAP_ProjectSchedule_v1.2_EN.mpp

| ID | WBS | Task | Duration | Start | Finish | Predecessors | Total float |
| --- | --- | --- | --- | --- | --- | --- | --- |
| 1 | 1 | **Fly Away Plus** | 77d | 2015-05-13 | 2015-08-27 |  | 0d |
| 2 | 1.1 | **Initiation** | 12d | 2015-05-13 | 2015-05-28 |  | 0d |
| 3 |  | Form up team roles | 0.5d | 2015-05-13 | 2015-05-13 |  | 57.5d |
| 4 |  | Uniform idea meeting | 0.5d | 2015-05-13 | 2015-05-13 |  | 0.5d |
| 5 | 1.1.3 | **Project Clarification** | 0.5d | 2015-05-13 | 2015-05-13 |  | 0.5d |
| 6 |  | Clarify project scope | 0.1d | 2015-05-13 | 2015-05-13 | 4 | 0.5d |
| 7 |  | Clarify technical requirements | 0.1d | 2015-05-13 | 2015-05-13 | 6 | 0.5d |
| 8 |  | Clarify rules in Team | 0.1d | 2015-05-13 | 2015-05-13 | 7 | 0.5d |
| 9 |  | Clarify working environments | 0.1d | 2015-05-13 | 2015-05-13 | 8 | 0.5d |
| 10 |  | Develop communications plan | 0.1d | 2015-05-13 | 2015-05-13 | 9 | 0.5d |
| 11 |  | List project features | 1d | 2015-05-13 | 2015-05-13 |  | 57d |
| 12 |  | Initiate Project structure | 1d | 2015-05-13 | 2015-05-13 |  | 57d |
| 13 |  | Create Coding conventions | 0.5d | 2015-05-13 | 2015-05-13 |  | 57.5d |
| 14 | 1.1.7 | **Environment** | 1d | 2015-05-14 | 2015-05-14 | 5 | 0.5d |
| 15 |  | Create guideline of installing and using environments | 0.5d | 2015-05-14 | 2015-05-14 |  | 0.5d |
| 16 |  | Setup TortoiseGit | 0.5d | 2015-05-14 | 2015-05-14 | 15 | 0.5d |
| 17 |  | Setup Visual Studio 2013 Ultimate | 0.5d | 2015-05-14 | 2015-05-14 |  | 0.5d |
| 18 |  | Setup Microsoft SQL Server 2012 | 0.5d | 2015-05-14 | 2015-05-14 |  | 0.5d |
| 19 |  | Training environments meeting | 0.5d | 2015-05-14 | 2015-05-14 |  | 0.5d |
| 20 | 1.1.8 | **Technology research** | 9d | 2015-05-15 | 2015-05-27 | 14 | 1d |
| 21 |  | Research technologies to be used in project | 3d | 2015-05-15 | 2015-05-19 |  | 9d |
| 22 |  | Study .NET MVC5 | 4d | 2015-05-15 | 2015-05-20 |  | 1d |
| 23 |  | Study Bootstrap | 1d | 2015-05-21 | 2015-05-21 | 22 | 1d |
| 24 |  | Study Javascript, jQuery | 4d | 2015-05-22 | 2015-05-27 | 23 | 1d |
| 25 | 1.1.9 | **Project Introduction** | 5.5d | 2015-05-15 | 2015-05-22 |  | 0.5d |
| 26 |  | Create "Project Introduction" document | 3d | 2015-05-15 | 2015-05-19 | 14 | 0.5d |
| 27 |  | Peer review "Project Introduction" document | 0.5d | 2015-05-20 | 2015-05-20 | 26 | 0.5d |
| 28 |  | Update "Project Introduction" document draft | 1d | 2015-05-20 | 2015-05-21 | 27 | 0.5d |
| 29 |  | Update "Project Introduction" based on instructor's comments | 1d | 2015-05-21 | 2015-05-22 | 28 | 0.5d |
| 30 |  | Summit Project Introduction | 0d | 2015-05-22 | 2015-05-22 | 29 | 0.5d |
| 31 |  | Kick-off meeting | 0.5d | 2015-05-22 | 2015-05-22 | 25 | 6d |
| 32 | 1.1.11 | **Q&A sheet** | 1.5d | 2015-05-22 | 2015-05-25 | 25 | 3d |
| 33 |  | Create Q&A | 0.5d | 2015-05-22 | 2015-05-22 |  | 5d |
| 34 |  | Update Q&A sheet | 0.5d | 2015-05-25 | 2015-05-25 | 33 | 5d |
| 35 |  | Translate Q&A sheet | 0.5d | 2015-05-25 | 2015-05-25 | 34 | 5d |
| 36 | 1.1.12 | **Project Plan** | 12d | 2015-05-13 | 2015-05-28 |  | 0d |
| 37 |  | Develop project definition | 2d | 2015-05-13 | 2015-05-14 |  | 0d |
| 38 |  | Work BreakDown Structure | 3d | 2015-05-15 | 2015-05-19 | 37 | 0d |
| 39 |  | Create project schedule document | 3d | 2015-05-20 | 2015-05-22 | 38 | 0d |
| 40 |  | Create project plan document | 1d | 2015-05-25 | 2015-05-25 | 39 | 0d |
| 41 |  | Create CM Plan document | 0.5d | 2015-05-26 | 2015-05-26 | 40 | 0d |
| 42 |  | Review & get comment of Project Plan | 0.5d | 2015-05-26 | 2015-05-26 | 41 | 0d |
| 43 |  | Develop Risk Register | 0.5d | 2015-05-27 | 2015-05-27 | 42 | 3.5d |
| 44 |  | Update Project Plan documents (Schedule, Project Plan in MS Word, CM Plan) | 1d | 2015-05-27 | 2015-05-27 | 42 | 0d |
| 45 |  | Create PP Review check list | 0.5d | 2015-05-28 | 2015-05-28 | 44 | 0d |
| 46 |  | Summit Project Plan Final version | 0d | 2015-05-28 | 2015-05-28 | 45FS+0.5d | 0d |
| 47 | 1.1.13 | **Requirement** | 4d | 2015-05-22 | 2015-05-28 | 25 | 0.5d |
| 48 | 1.1.13.1 | **User Requirement** | 2d | 2015-05-22 | 2015-05-26 |  | 0.5d |
| 49 |  | Develop brief "User Requirements Specification" document | 1d | 2015-05-22 | 2015-05-25 |  | 0.5d |
| 50 |  | Peer review brief "User Requirements Specification" document | 0.5d | 2015-05-25 | 2015-05-25 | 49 | 0.5d |
| 51 |  | Update brief "User Requirements Specification" document | 0.5d | 2015-05-26 | 2015-05-26 | 50 | 0.5d |
| 52 | 1.1.13.2 | **Mock-up screens** | 2d | 2015-05-26 | 2015-05-28 | 48 | 0.5d |
| 53 |  | Collect business requirements and processes | 0.5d | 2015-05-26 | 2015-05-26 |  | 0.5d |
| 54 |  | Develop main features' mockup screens | 1d | 2015-05-27 | 2015-05-27 | 53 | 0.5d |
| 55 |  | Review and edit screen main features' mockup screens | 0.5d | 2015-05-28 | 2015-05-28 | 54 | 0.5d |
| 56 |  | Complete main features' mockup screens | 0d | 2015-05-28 | 2015-05-28 | 55 | 0.5d |
| 57 | 1.2 | **Solution** | 21d | 2015-05-29 | 2015-06-26 | 2 | 0d |
| 58 | 1.2.1 | **Sofware Requirement Specification** | 10d | 2015-05-29 | 2015-06-11 |  | 0d |
| 59 |  | Complete mock-up screens | 2d | 2015-05-29 | 2015-06-01 |  | 8d |
| 60 | 1.2.1.2 | **Functional Requirement Specification** | 9d | 2015-05-29 | 2015-06-10 |  | 0d |
| 61 | 1.2.1.2.1 | **Part 1** | 4d | 2015-05-29 | 2015-06-03 |  | 0d |
| 62 |  | Homepage Module | 1d | 2015-05-29 | 2015-05-29 |  | 3d |
| 63 |  | User personal page Module | 1d | 2015-05-29 | 2015-05-29 |  | 0d |
| 64 |  | Admin Module | 1d | 2015-06-01 | 2015-06-01 | 63 | 2d |
| 65 |  | Search Module | 1d | 2015-06-01 | 2015-06-01 | 63 | 0d |
| 66 |  | Login/Logout Module | 1d | 2015-06-02 | 2015-06-02 | 65 | 1d |
| 67 |  | Friend Module | 1d | 2015-06-02 | 2015-06-02 | 65 | 0d |
| 68 |  | Room module | 1d | 2015-06-03 | 2015-06-03 | 67 | 0d |
| 69 | 1.2.1.2.2 | **Part 2** | 3d | 2015-06-08 | 2015-06-10 | 61FS+2d | 0d |
| 70 |  | Suggestion Module | 1d | 2015-06-08 | 2015-06-08 |  | 2d |

| ID | WBS | Task | Duration | Start | Finish | Predecessors | Total float |
| --- | --- | --- | --- | --- | --- | --- | --- |
| 71 |  | Sharing Module | 1d | 2015-06-08 | 2015-06-08 |  | 0d |
| 72 |  | Report Module | 1d | 2015-06-09 | 2015-06-09 | 71 | 1d |
| 73 |  | Planing trip helper Module | 1d | 2015-06-09 | 2015-06-09 | 71 | 0d |
| 74 |  | Chat module | 1d | 2015-06-10 | 2015-06-10 | 73 | 0d |
| 75 | 1.2.1.3 | **Non-functional Requirements Specification** | 1d | 2015-06-11 | 2015-06-11 | 69 | 11d |
| 76 |  | Develop User Interface requirements | 1d | 2015-06-11 | 2015-06-11 |  | 11d |
| 77 |  | Develop Performance requirements | 1d | 2015-06-11 | 2015-06-11 |  | 11d |
| 78 | 1.2.2 | **System Architectural Design** | 5d | 2015-05-29 | 2015-06-04 |  | 4d |
| 79 |  | Define the system structure and unify system features | 2d | 2015-05-29 | 2015-06-01 |  | 4d |
| 80 |  | Study the common System Architetures | 1d | 2015-06-02 | 2015-06-02 | 79 | 4d |
| 81 |  | Make choice of System Architeture | 1d | 2015-06-03 | 2015-06-03 | 80 | 4d |
| 82 |  | Complete Architecture Design version 1.0 | 0d | 2015-06-04 | 2015-06-04 | 81FS+1d | 4d |
| 83 | 1.2.3 | **Detailed Design** | 15d | 2015-06-08 | 2015-06-26 | 78 | 0d |
| 84 | 1.2.3.1 | **Database design** | 7d | 2015-06-11 | 2015-06-19 | 60 | 0d |
| 85 |  | Organize information to Database tables | 3d | 2015-06-11 | 2015-06-15 |  | 0d |
| 86 |  | Define tables' relationships | 1d | 2015-06-16 | 2015-06-16 | 85 | 0d |
| 87 |  | Apply normalization rules to Database design | 1d | 2015-06-17 | 2015-06-17 | 86 | 0d |
| 88 |  | Refine Database design | 2d | 2015-06-18 | 2015-06-19 | 87 | 0d |
| 89 |  | Refine Database Design | 1d | 2015-06-22 | 2015-06-22 | 84 | 4d |
| 90 | 1.2.3.3 | **Screen design** | 3d | 2015-06-08 | 2015-06-10 |  | 7d |
| 91 |  | Create Screen Flow digram | 1d | 2015-06-08 | 2015-06-08 | 78FS+1d | 7d |
| 92 |  | Create Screen Definition | 1d | 2015-06-09 | 2015-06-09 | 91 | 7d |
| 93 |  | Create Screen Design | 1d | 2015-06-10 | 2015-06-10 | 92 | 7d |
| 94 | 1.2.3.4 | **Class/Component Design** | 5d | 2015-06-22 | 2015-06-26 | 90 | 0d |
| 95 |  | Create Data models | 1d | 2015-06-22 | 2015-06-22 | 84 | 0d |
| 96 |  | List components of the system | 1d | 2015-06-23 | 2015-06-23 | 95 | 0d |
| 97 |  | Break modules into classes | 1d | 2015-06-24 | 2015-06-24 | 96 | 0d |
| 98 |  | Create Class diagram | 2d | 2015-06-25 | 2015-06-26 | 97 | 0d |
| 99 |  | Create Class description document | 1d | 2015-06-25 | 2015-06-25 | 97 | 1d |
| 100 |  | Create Flow diagram | 1d | 2015-06-24 | 2015-06-24 | 96 | 0d |
| 101 |  | Create Progress Report 2 | 1d | 2015-06-25 | 2015-06-25 | 100 | 0d |
| 102 |  | Create Design review checklists | 1d | 2015-06-26 | 2015-06-26 | 101 | 0d |
| 103 | 1.2.4 | **Project Management** | 2d | 2015-06-05 | 2015-06-08 | 78 | 14d |
| 104 |  | Update project plan | 2d | 2015-06-05 | 2015-06-08 |  | 14d |
| 105 |  | Coding About/Contact Page | 2d | 2015-06-05 | 2015-06-08 |  | 14d |
| 106 |  | Coding Login with Facebook and Google+ feature | 1d | 2015-06-05 | 2015-06-05 |  | 15d |
| 107 | 1.2.5 | **Test** | 7d | 2015-05-29 | 2015-06-08 |  | 14d |
| 108 |  | Create Test plan | 3d | 2015-05-29 | 2015-06-02 |  | 14d |
| 109 |  | Review + Update Test plan | 1d | 2015-06-03 | 2015-06-03 | 108 | 14d |
| 110 |  | Test plan approved | 0d | 2015-06-03 | 2015-06-03 | 109 | 14d |
| 111 |  | Start writing Test cases | 3d | 2015-06-04 | 2015-06-08 | 110 | 14d |
| 112 | 1.3 | **Construction** | 37d | 2015-06-26 | 2015-08-18 | 57 | 0d |
| 113 | 1.3.1 | **Design** | 3d | 2015-06-29 | 2015-07-01 |  | 0d |
| 114 |  | Refine Design document | 3d | 2015-06-29 | 2015-07-01 |  | 0d |
| 115 | 1.3.2 | **Coding** | 17d | 2015-07-02 | 2015-07-24 | 113 | 0d |
| 116 |  | Build prototype | 2d | 2015-07-02 | 2015-07-03 |  | 0d |
| 117 |  | Prototype approved | 0d | 2015-07-03 | 2015-07-03 | 116 | 0d |
| 118 | 1.3.2.3 | **Coding product (Continue)** | 13d | 2015-07-06 | 2015-07-22 | 117 | 0d |
| 119 |  | Develop UI | 1w | 2015-07-06 | 2015-07-10 |  | 0d |
| 120 |  | Develop objects | 2d | 2015-07-06 | 2015-07-07 | 119SS | 0d |
| 121 |  | Create system documentation | 3d | 2015-07-06 | 2015-07-08 | 120SS | 12d |
| 122 | 1.3.2.3.4 | **Coding Modules** | 10d | 2015-07-09 | 2015-07-22 | 120FS+1d | 0d |
| 123 | 1.3.2.3.4.1 | **Part 1** | 5d | 2015-07-09 | 2015-07-15 |  | 0d |
| 124 |  | Homepage Module | 2d | 2015-07-09 | 2015-07-10 |  | 0d |
| 125 |  | User personal page Module | 1d | 2015-07-13 | 2015-07-13 | 124 | 0d |
| 126 |  | Admin Module | 2d | 2015-07-09 | 2015-07-10 | 124SS | 0d |
| 127 |  | Search Module | 1d | 2015-07-13 | 2015-07-13 | 126 | 0d |
| 128 |  | Login/Logout Module | 1d | 2015-07-13 | 2015-07-13 | 127SS | 0d |
| 129 |  | Friend Module | 2d | 2015-07-14 | 2015-07-15 | 125 | 0d |
| 130 |  | Room module | 2d | 2015-07-14 | 2015-07-15 | 128 | 0d |
| 131 | 1.3.2.3.4.2 | **Part 2** | 4d | 2015-07-17 | 2015-07-22 | 123FS+1d | 0d |
| 132 |  | Suggestion Module | 2d | 2015-07-17 | 2015-07-20 |  | 0d |
| 133 |  | Sharing Module | 1d | 2015-07-21 | 2015-07-21 | 132 | 0d |
| 134 |  | Report Module | 1d | 2015-07-22 | 2015-07-22 | 133 | 0d |
| 135 |  | Chat module | 2d | 2015-07-17 | 2015-07-20 | 132SS | 0d |
| 136 |  | Planing trip helper Module | 2d | 2015-07-21 | 2015-07-22 | 135 | 0d |
| 137 |  | Product development completes | 0d | 2015-07-24 | 2015-07-24 | 122FS+2d | 0d |
| 138 | 1.3.3 | **Testing** | 37d | 2015-06-26 | 2015-08-18 | 107 | 0d |
| 139 | 1.3.3.1 | **Writing Test cases (Continue)** | 15d | 2015-06-29 | 2015-07-17 |  | 22d |
| 140 |  | Create Integration Test Case | 1w | 2015-06-29 | 2015-07-03 |  | 22d |

| ID | WBS | Task | Duration | Start | Finish | Predecessors | Total float |
| --- | --- | --- | --- | --- | --- | --- | --- |
| 141 |  | Update and review Integration Test Case | 3d | 2015-07-08 | 2015-07-10 | 140FS+2d | 22d |
| 142 |  | Create System Test Case | 3d | 2015-07-13 | 2015-07-15 | 141 | 22d |
| 143 |  | Update and review System Test Case | 2d | 2015-07-16 | 2015-07-17 | 142 | 22d |
| 144 |  | Writing Test cases completes | 0d | 2015-06-26 | 2015-06-26 |  | 37d |
| 145 | 1.3.3.3 | **Execute Test** | 17d | 2015-07-27 | 2015-08-18 | 115 | 0d |
| 146 | 1.3.3.3.1 | **Execute Test Part 1** | 8d | 2015-07-27 | 2015-08-05 |  | 0d |
| 147 |  | Execute Component Test | 2d | 2015-07-27 | 2015-07-28 |  | 0d |
| 148 |  | Fix bug Component Test | 2d | 2015-07-29 | 2015-07-30 | 147 | 4d |
| 149 |  | Execute Integration Test | 2d | 2015-07-29 | 2015-07-30 | 147 | 0d |
| 150 |  | Fix bug Integration Test | 2d | 2015-07-31 | 2015-08-03 | 149 | 2d |
| 151 |  | Execute System Test | 2d | 2015-07-31 | 2015-08-03 | 149 | 0d |
| 152 |  | Fix bug System Test | 2d | 2015-08-04 | 2015-08-05 | 151 | 0d |
| 153 | 1.3.3.3.2 | **Execute Test Part 2** | 8d | 2015-08-06 | 2015-08-17 | 146 | 0d |
| 154 |  | Execute Component Test | 2d | 2015-08-06 | 2015-08-07 |  | 0d |
| 155 |  | Fix bug Component Test | 2d | 2015-08-10 | 2015-08-11 | 154 | 5d |
| 156 |  | Execute Integration Test | 2d | 2015-08-10 | 2015-08-11 | 154 | 0d |
| 157 |  | Fix bug Integration Test | 2d | 2015-08-12 | 2015-08-13 | 156 | 3d |
| 158 |  | Execute System Test | 2d | 2015-08-12 | 2015-08-13 | 156 | 0d |
| 159 |  | Fix bug System Test | 2d | 2015-08-14 | 2015-08-17 | 158 | 0d |
| 160 |  | Create Test Report first verstion | 1d | 2015-08-18 | 2015-08-18 | 159 | 0d |
| 161 |  | Complete Testing | 0d | 2015-08-18 | 2015-08-18 | 160 | 0d |
| 162 | 1.3.4 | **User Manual** | 2d | 2015-07-27 | 2015-07-28 | 115 | 15d |
| 163 |  | Create Installation guideline | 1d | 2015-07-27 | 2015-07-27 |  | 15d |
| 164 |  | Create User guideline | 1d | 2015-07-27 | 2015-07-27 | 163SS | 15d |
| 165 |  | Review + Update guidelines | 1d | 2015-07-28 | 2015-07-28 | 164 | 15d |
| 166 | 1.3.5 | **Manage development** | 5d | 2015-07-02 | 2015-07-08 | 115SS | 29d |
| 167 | 1.3.5.1 | **Manage scope/cost/time** | 5d | 2015-07-02 | 2015-07-08 |  | 29d |
| 168 |  | Monitor product changes | 1w | 2015-07-02 | 2015-07-08 |  | 29d |
| 169 |  | Monitor project changes | 1w | 2015-07-02 | 2015-07-08 |  | 29d |
| 170 | 1.3.5.2 | **Manage communications** | 1d | 2015-07-02 | 2015-07-02 |  | 33d |
| 171 | 1.3.5.2.1 | **Implement communications methods and strategies** | 1d | 2015-07-02 | 2015-07-02 |  | 33d |
| 172 |  | Select tools | 1d | 2015-07-02 | 2015-07-02 |  | 33d |
| 173 | 1.3.5.2.2 | **Distribute information** | 1d | 2015-07-02 | 2015-07-02 |  | 33d |
| 174 |  | Attend team meeting | 1d | 2015-07-02 | 2015-07-02 |  | 33d |
| 175 |  | Create status reports | 1d | 2015-07-02 | 2015-07-02 |  | 33d |
| 176 |  | Create Weekly Report | 1d | 2015-07-02 | 2015-07-02 |  | 33d |
| 177 |  | Resolve communications problems | 1d | 2015-07-02 | 2015-07-02 |  | 33d |
| 178 | 1.3.5.3 | **Manage quality control** | 1d | 2015-07-02 | 2015-07-02 |  | 33d |
| 179 |  | Monitor product quality | 1d | 2015-07-02 | 2015-07-02 |  | 33d |
| 180 | 1.3.5.3.2 | **Monitor project quality** | 1d | 2015-07-02 | 2015-07-02 |  | 33d |
| 181 |  | Implement process improvements | 1d | 2015-07-02 | 2015-07-02 |  | 33d |
| 182 | 1.3.5.4 | **Manage risk** | 1d | 2015-07-02 | 2015-07-02 |  | 33d |
| 183 |  | Monitor risks | 1d | 2015-07-02 | 2015-07-02 |  | 33d |
| 184 |  | Specify responses | 1d | 2015-07-02 | 2015-07-02 |  | 33d |
| 185 |  | Manage integration | 1d | 2015-07-02 | 2015-07-02 |  | 33d |
| 186 | 1.4 | **Termination** | 7d | 2015-08-19 | 2015-08-27 | 112 | 0d |
| 187 | 1.4.1 | **Pre-Closing** | 2d | 2015-08-19 | 2015-08-20 |  | 0d |
| 188 |  | Training presentation | 2d | 2015-08-19 | 2015-08-20 |  | 0d |
| 189 | 1.4.2 | **Closing** | 4d | 2015-08-24 | 2015-08-27 | 187FS+1d | 0d |
| 190 |  | Prepare for presentation | 3d | 2015-08-24 | 2015-08-26 |  | 0d |
| 191 |  | Represent Capstone Project and Completed | 1d | 2015-08-27 | 2015-08-27 | 190 | 0d |

## Version 2 (saved 2015-05-29)

Last finish stays 2015-08-27.

Changed:

| ID | Task | Other |
| --- | --- | --- |
| 58 | **Sofware Requirement Specification [Chỉnh 3 tuần]** | was named Sofware Requirement Specification |
| 75 | **Non-functional Requirements Specification [Lên trên]** | was named Non-functional Requirements Specification |

## Version 3 (saved 2015-06-10)

Note of the change: Post

Last finish stays 2015-08-27.

Changed:

| ID | Task | Finish | Duration | Total float | Other |
| --- | --- | --- | --- | --- | --- |
| 3 | Form up team roles |  |  | 57.5d → 11.5d | resources none → TEAM |
| 4 | Uniform idea meeting |  |  |  | resources none → TEAM |
| 6 | Clarify project scope |  |  |  | resources none → TEAM |
| 7 | Clarify technical requirements |  |  |  | resources none → TEAM |
| 8 | Clarify rules in Team |  |  |  | resources none → TEAM |
| 9 | Clarify working environments |  |  |  | resources none → TEAM |
| 10 | Develop communications plan |  |  |  | resources none → DucHN |
| 11 | List project features |  |  | 57d → 11d | resources none → TEAM |
| 12 | Initiate Project structure |  |  | 57d → 11d | resources none → HaiDT |
| 13 | Create Coding conventions |  |  | 57.5d → 11.5d | resources none → HaiDT |
| 15 | Create guideline of installing and using environments |  |  |  | resources none → DucHN |
| 16 | Setup TortoiseGit |  |  |  | resources none → TEAM |
| 17 | Setup Visual Studio 2013 Ultimate |  |  | 0.5d → 1d | resources none → TEAM |
| 18 | Setup Microsoft SQL Server 2012 |  |  | 0.5d → 1d | resources none → TEAM |
| 19 | Training environments meeting |  |  | 0.5d → 1d | resources none → TEAM |
| 21 | Research technologies to be used in project |  |  | 9d → 7d | resources none → DucHN |
| 22 | Study .NET MVC5 |  |  |  | resources none → DevTeam |
| 23 | Study Bootstrap |  |  |  | resources none → DevTeam |
| 24 | Study Javascript, jQuery |  |  |  | resources none → DevTeam |
| 26 | Create "Project Introduction" document |  |  |  | resources none → ThuyLM |
| 27 | Peer review "Project Introduction" document |  |  |  | resources none → DucHN |
| 28 | Update "Project Introduction" document draft |  |  |  | resources none → DucHN |
| 29 | Update "Project Introduction" based on instructor's comments |  |  |  | resources none → ThuyLM |
| 31 | Kick-off meeting |  |  | 6d → 4d | resources none → TEAM |
| 33 | Create Q&A |  |  | 5d → 3d | resources none → LucPT |
| 34 | Update Q&A sheet |  |  | 5d → 3d | resources none → LucPT |
| 35 | Translate Q&A sheet |  |  | 5d → 3d | resources none → LucPT |
| 37 | Develop project definition |  |  |  | resources none → DucHN |
| 38 | Work BreakDown Structure |  |  |  | resources none → DucHN |
| 39 | Create project schedule document |  |  |  | resources none → DucHN |
| 40 | Create project plan document |  |  |  | resources none → DucHN |
| 41 | Create CM Plan document |  |  |  | resources none → DucHN |
| 42 | Review & get comment of Project Plan |  |  |  | resources none → DucHN |
| 43 | Develop Risk Register |  |  | 3.5d → 1.5d | resources none → HieuTM |
| 44 | Update Project Plan documents (Schedule, Project Plan in MS Word, CM Plan) |  |  |  | resources none → DucHN |
| 45 | Create PP Review check list |  |  |  | resources none → ThuyLM |
| 49 | Develop brief "User Requirements Specification" document |  |  |  | resources none → DocTeam |
| 50 | Peer review brief "User Requirements Specification" document |  |  |  | resources none → DocTeam |
| 51 | Update brief "User Requirements Specification" document |  |  |  | resources none → DocTeam |
| 53 | Collect business requirements and processes |  |  |  | resources none → TEAM |
| 54 | Develop main features' mockup screens |  |  |  | resources none → DevTeam |
| 55 | Review and edit screen main features' mockup screens |  |  |  | resources none → DevTeam |
| 60 | **Non-functional Requirements Specification** |  |  |  | was named Non-functional Requirements Specification [Lên trên] |
| 65 | Homepage Module | 2015-05-29 → 2015-06-01 (+3d) | 1d → 2d | 3d → 2d | resources none → DucHN |
| 66 | User personal page Module |  |  |  | resources none → HoangNM |
| 67 | Admin Module |  |  |  | resources none → HaiDT |
| 68 | Search Module |  |  |  | resources none → DucHN |
| 69 | Login/Logout Module |  |  |  | resources none → HoangNM |
| 70 | Friend Module |  |  |  | resources none → HaiDT |
| 71 | Room module |  |  |  | resources none → DucHN |
| 73 | Suggestion Module |  |  |  | resources none → HoangNM |
| 74 | Sharing Module |  |  |  | resources none → HaiDT |
| 75 | Report Module |  |  |  | resources none → DucHN |
| 76 | Planing trip helper Module |  |  |  | resources none → HoangNM |
| 77 | Chat module |  |  |  | resources none → HaiDT |
| 79 | Define the system structure and unify system features |  |  |  | resources none → HaiDT |
| 80 | Study the common System Architetures |  |  |  | resources none → DucHN |
| 81 | Make choice of System Architeture |  |  |  | resources none → DevTeam |
| 85 | Organize information to Database tables |  |  |  | resources none → HaiDT |
| 86 | Define tables' relationships |  |  |  | resources none → HaiDT |
| 87 | Apply normalization rules to Database design |  |  |  | resources none → DucHN |
| 88 | Refine Database design |  |  |  | resources none → HoangNM |
| 89 | Refine Database Design |  |  |  | resources none → DevTeam |
| 91 | Create Screen Flow digram |  |  |  | resources none → ThuyLM |
| 92 | Create Screen Definition |  |  |  | resources none → HieuTM |
| 93 | Create Screen Design |  |  |  | resources none → LucPT |
| 95 | Create Data models |  |  |  | resources none → HaiDT |
| 96 | List components of the system |  |  |  | resources none → DucHN |
| 97 | Break modules into classes |  |  |  | resources none → DucHN |
| 98 | Create Class diagram |  |  |  | resources none → HaiDT |

| ID | Task | Other |
| --- | --- | --- |
| 99 | Create Class description document | resources none → HaiDT |
| 100 | Create Flow diagram | resources none → HoangNM |
| 101 | Create Progress Report 2 | resources none → DucHN |
| 102 | Create Design review checklists | resources none → ThuyLM |

## Version 4 (saved 2015-06-10)

Note of the change: Plan

Last finish stays 2015-08-27.

Changed:

| ID | Task | Other |
| --- | --- | --- |
| 104 | Update project plan | resources none → DucHN |
| 105 | Coding About/Contact Page | resources none → DucHN |
| 106 | Coding Login with Facebook and Google+ feature | resources none → HaiDT |
| 108 | Create Test plan | resources none → ThuyLM |
| 109 | Review + Update Test plan | resources none → LucPT |
| 111 | Start writing Test cases | resources none → DocTeam |
| 114 | Refine Design document | resources none → HaiDT |
| 116 | Build prototype | resources none → DevTeam |
| 119 | Develop UI | resources none → DucHN |
| 120 | Develop objects | resources none → HaiDT |
| 121 | Create system documentation | resources none → HoangNM |
| 124 | Homepage Module | resources none → DucHN |
| 125 | User personal page Module | resources none → HaiDT |
| 126 | Admin Module | resources none → HoangNM |
| 127 | Search Module | resources none → DucHN |
| 128 | Login/Logout Module | resources none → HaiDT |
| 129 | Friend Module | resources none → HoangNM |
| 130 | Room module | resources none → DucHN |
| 132 | Suggestion Module | resources none → HaiDT |
| 133 | Sharing Module | resources none → HoangNM |
| 134 | Report Module | resources none → DucHN |
| 135 | Chat module | resources none → HaiDT |
| 136 | Planing trip helper Module | resources none → HoangNM |
| 140 | Create Integration Test Case | resources none → ThuyLM |
| 141 | Update and review Integration Test Case | resources none → HieuTM |
| 142 | Create System Test Case | resources none → DocTeam |
| 143 | Update and review System Test Case | resources none → DocTeam |
| 147 | Execute Component Test | resources none → DocTeam |
| 148 | Fix bug Component Test | resources none → DocTeam |
| 149 | Execute Integration Test | resources none → DocTeam |
| 150 | Fix bug Integration Test | resources none → DocTeam |
| 151 | Execute System Test | resources none → DocTeam |
| 152 | Fix bug System Test | resources none → DocTeam |
| 154 | Execute Component Test | resources none → DocTeam |
| 155 | Fix bug Component Test | resources none → DocTeam |
| 156 | Execute Integration Test | resources none → DocTeam |
| 157 | Fix bug Integration Test | resources none → DocTeam |
| 158 | Execute System Test | resources none → DocTeam |
| 159 | Fix bug System Test | resources none → DocTeam |
| 160 | Create Test Report first verstion | resources none → DocTeam |
| 163 | Create Installation guideline | resources none → DucHN |
| 164 | Create User guideline | resources none → HaiDT |
| 165 | Review + Update guidelines | resources none → DucHN |
| 168 | Monitor product changes | resources none → DucHN |
| 169 | Monitor project changes | resources none → DucHN |
| 172 | Select tools | resources none → DucHN |
| 174 | Attend team meeting | resources none → TEAM |
| 175 | Create status reports | resources none → HoangNM |
| 176 | Create Weekly Report | resources none → DucHN |
| 177 | Resolve communications problems | resources none → DucHN |
| 179 | Monitor product quality | resources none → DucHN |
| 181 | Implement process improvements | resources none → DucHN |
| 183 | Monitor risks | resources none → DucHN |
| 184 | Specify responses | resources none → DucHN |
| 185 | Manage integration | resources none → DucHN |
| 188 | Training presentation | resources none → TEAM |
| 190 | Prepare for presentation | resources none → TEAM |
| 191 | Represent Capstone Project and Completed | resources none → TEAM |

## Version 5 (saved 2015-06-10)

Last finish 2015-08-27 → 2015-09-02 (+6d).

Removed: 59 Complete mock-up screens

Changed:

| ID | Task | Start | Finish | Duration | Total float |
| --- | --- | --- | --- | --- | --- |
| 1 | **Fly Away Plus** |  | 2015-08-27 → 2015-09-02 (+6d) | 77d → 81d |  |
| 57 | **Solution** |  | 2015-06-26 → 2015-07-02 (+6d) | 21d → 25d |  |
| 58 | **Sofware Requirement Specification [Chỉnh 3 tuần]** |  | 2015-06-11 → 2015-06-17 (+6d) | 10d → 14d |  |
| 59 | **Non-functional Requirements Specification** | 2015-06-11 → 2015-06-17 (+6d) | 2015-06-11 → 2015-06-17 (+6d) |  |  |
| 60 | Develop User Interface requirements | 2015-06-11 → 2015-06-17 (+6d) | 2015-06-11 → 2015-06-17 (+6d) |  |  |
| 61 | Develop Performance requirements | 2015-06-11 → 2015-06-17 (+6d) | 2015-06-11 → 2015-06-17 (+6d) |  |  |
| 62 | **Functional Requirement Specification** |  | 2015-06-10 → 2015-06-16 (+6d) | 9d → 13d |  |
| 63 | **Part 1** |  | 2015-06-03 → 2015-06-04 (+1d) | 4d → 5d |  |
| 69 | Friend Module |  | 2015-06-02 → 2015-06-03 (+1d) | 1d → 2d |  |
| 70 | Room module | 2015-06-03 → 2015-06-04 (+1d) | 2015-06-03 → 2015-06-04 (+1d) |  |  |
| 71 | **Part 2** | 2015-06-08 → 2015-06-09 (+1d) | 2015-06-10 → 2015-06-16 (+6d) | 3d → 6d |  |
| 72 | Suggestion Module | 2015-06-08 → 2015-06-09 (+1d) | 2015-06-08 → 2015-06-09 (+1d) |  | 2d → 5d |
| 73 | Sharing Module | 2015-06-08 → 2015-06-09 (+1d) | 2015-06-08 → 2015-06-09 (+1d) |  |  |
| 74 | Report Module | 2015-06-09 → 2015-06-10 (+1d) | 2015-06-09 → 2015-06-10 (+1d) |  | 1d → 4d |
| 75 | Planing trip helper Module | 2015-06-09 → 2015-06-10 (+1d) | 2015-06-09 → 2015-06-12 (+3d) | 1d → 3d |  |
| 76 | Chat module | 2015-06-10 → 2015-06-15 (+5d) | 2015-06-10 → 2015-06-16 (+6d) | 1d → 2d |  |
| 82 | **Detailed Design** |  | 2015-06-26 → 2015-07-02 (+6d) | 15d → 19d |  |
| 83 | **Database design** | 2015-06-11 → 2015-06-17 (+6d) | 2015-06-19 → 2015-06-25 (+6d) |  |  |
| 84 | Organize information to Database tables | 2015-06-11 → 2015-06-17 (+6d) | 2015-06-15 → 2015-06-19 (+4d) |  |  |
| 85 | Define tables' relationships | 2015-06-16 → 2015-06-22 (+6d) | 2015-06-16 → 2015-06-22 (+6d) |  |  |
| 86 | Apply normalization rules to Database design | 2015-06-17 → 2015-06-23 (+6d) | 2015-06-17 → 2015-06-23 (+6d) |  |  |
| 87 | Refine Database design | 2015-06-18 → 2015-06-24 (+6d) | 2015-06-19 → 2015-06-25 (+6d) |  |  |
| 88 | Refine Database Design | 2015-06-22 → 2015-06-26 (+4d) | 2015-06-22 → 2015-06-26 (+4d) |  |  |
| 93 | **Class/Component Design** | 2015-06-22 → 2015-06-26 (+4d) | 2015-06-26 → 2015-07-02 (+6d) |  |  |
| 94 | Create Data models | 2015-06-22 → 2015-06-26 (+4d) | 2015-06-22 → 2015-06-26 (+4d) |  |  |
| 95 | List components of the system | 2015-06-23 → 2015-06-29 (+6d) | 2015-06-23 → 2015-06-29 (+6d) |  |  |
| 96 | Break modules into classes | 2015-06-24 → 2015-06-30 (+6d) | 2015-06-24 → 2015-06-30 (+6d) |  |  |
| 97 | Create Class diagram | 2015-06-25 → 2015-07-01 (+6d) | 2015-06-26 → 2015-07-02 (+6d) |  |  |
| 98 | Create Class description document | 2015-06-25 → 2015-07-01 (+6d) | 2015-06-25 → 2015-07-01 (+6d) |  |  |
| 99 | Create Flow diagram | 2015-06-24 → 2015-06-30 (+6d) | 2015-06-24 → 2015-06-30 (+6d) |  |  |
| 100 | Create Progress Report 2 | 2015-06-25 → 2015-07-01 (+6d) | 2015-06-25 → 2015-07-01 (+6d) |  |  |
| 101 | Create Design review checklists | 2015-06-26 → 2015-07-02 (+6d) | 2015-06-26 → 2015-07-02 (+6d) |  |  |
| 111 | **Construction** | 2015-06-26 → 2015-07-02 (+6d) | 2015-08-18 → 2015-08-24 (+6d) |  |  |
| 112 | **Design** | 2015-06-29 → 2015-07-03 (+4d) | 2015-07-01 → 2015-07-07 (+6d) |  |  |
| 113 | Refine Design document | 2015-06-29 → 2015-07-03 (+4d) | 2015-07-01 → 2015-07-07 (+6d) |  |  |
| 114 | **Coding** | 2015-07-02 → 2015-07-08 (+6d) | 2015-07-24 → 2015-07-30 (+6d) |  |  |
| 115 | Build prototype | 2015-07-02 → 2015-07-08 (+6d) | 2015-07-03 → 2015-07-09 (+6d) |  |  |
| 116 | Prototype approved | 2015-07-03 → 2015-07-09 (+6d) | 2015-07-03 → 2015-07-09 (+6d) |  |  |
| 117 | **Coding product (Continue)** | 2015-07-06 → 2015-07-10 (+4d) | 2015-07-22 → 2015-07-28 (+6d) |  |  |
| 118 | Develop UI | 2015-07-06 → 2015-07-10 (+4d) | 2015-07-10 → 2015-07-16 (+6d) |  |  |
| 119 | Develop objects | 2015-07-06 → 2015-07-10 (+4d) | 2015-07-07 → 2015-07-13 (+6d) |  |  |
| 120 | Create system documentation | 2015-07-06 → 2015-07-10 (+4d) | 2015-07-08 → 2015-07-14 (+6d) |  |  |
| 121 | **Coding Modules** | 2015-07-09 → 2015-07-15 (+6d) | 2015-07-22 → 2015-07-28 (+6d) |  |  |
| 122 | **Part 1** | 2015-07-09 → 2015-07-15 (+6d) | 2015-07-15 → 2015-07-21 (+6d) |  |  |
| 123 | Homepage Module | 2015-07-09 → 2015-07-15 (+6d) | 2015-07-10 → 2015-07-16 (+6d) |  |  |
| 124 | User personal page Module | 2015-07-13 → 2015-07-17 (+4d) | 2015-07-13 → 2015-07-17 (+4d) |  |  |
| 125 | Admin Module | 2015-07-09 → 2015-07-15 (+6d) | 2015-07-10 → 2015-07-16 (+6d) |  |  |
| 126 | Search Module | 2015-07-13 → 2015-07-17 (+4d) | 2015-07-13 → 2015-07-17 (+4d) |  |  |
| 127 | Login/Logout Module | 2015-07-13 → 2015-07-17 (+4d) | 2015-07-13 → 2015-07-17 (+4d) |  |  |
| 128 | Friend Module | 2015-07-14 → 2015-07-20 (+6d) | 2015-07-15 → 2015-07-21 (+6d) |  |  |
| 129 | Room module | 2015-07-14 → 2015-07-20 (+6d) | 2015-07-15 → 2015-07-21 (+6d) |  |  |
| 130 | **Part 2** | 2015-07-17 → 2015-07-23 (+6d) | 2015-07-22 → 2015-07-28 (+6d) |  |  |
| 131 | Suggestion Module | 2015-07-17 → 2015-07-23 (+6d) | 2015-07-20 → 2015-07-24 (+4d) |  |  |
| 132 | Sharing Module | 2015-07-21 → 2015-07-27 (+6d) | 2015-07-21 → 2015-07-27 (+6d) |  |  |
| 133 | Report Module | 2015-07-22 → 2015-07-28 (+6d) | 2015-07-22 → 2015-07-28 (+6d) |  |  |
| 134 | Chat module | 2015-07-17 → 2015-07-23 (+6d) | 2015-07-20 → 2015-07-24 (+4d) |  |  |
| 135 | Planing trip helper Module | 2015-07-21 → 2015-07-27 (+6d) | 2015-07-22 → 2015-07-28 (+6d) |  |  |
| 136 | Product development completes | 2015-07-24 → 2015-07-30 (+6d) | 2015-07-24 → 2015-07-30 (+6d) |  |  |
| 137 | **Testing** | 2015-06-26 → 2015-07-02 (+6d) | 2015-08-18 → 2015-08-24 (+6d) |  |  |
| 138 | **Writing Test cases (Continue)** | 2015-06-29 → 2015-07-03 (+4d) | 2015-07-17 → 2015-07-23 (+6d) |  |  |
| 139 | Create Integration Test Case | 2015-06-29 → 2015-07-03 (+4d) | 2015-07-03 → 2015-07-09 (+6d) |  |  |
| 140 | Update and review Integration Test Case | 2015-07-08 → 2015-07-14 (+6d) | 2015-07-10 → 2015-07-16 (+6d) |  |  |
| 141 | Create System Test Case | 2015-07-13 → 2015-07-17 (+4d) | 2015-07-15 → 2015-07-21 (+6d) |  |  |
| 142 | Update and review System Test Case | 2015-07-16 → 2015-07-22 (+6d) | 2015-07-17 → 2015-07-23 (+6d) |  |  |
| 143 | Writing Test cases completes | 2015-06-26 → 2015-07-02 (+6d) | 2015-06-26 → 2015-07-02 (+6d) |  |  |
| 144 | **Execute Test** | 2015-07-27 → 2015-07-31 (+4d) | 2015-08-18 → 2015-08-24 (+6d) |  |  |
| 145 | **Execute Test Part 1** | 2015-07-27 → 2015-07-31 (+4d) | 2015-08-05 → 2015-08-11 (+6d) |  |  |
| 146 | Execute Component Test | 2015-07-27 → 2015-07-31 (+4d) | 2015-07-28 → 2015-08-03 (+6d) |  |  |
| 147 | Fix bug Component Test | 2015-07-29 → 2015-08-04 (+6d) | 2015-07-30 → 2015-08-05 (+6d) |  |  |
| 148 | Execute Integration Test | 2015-07-29 → 2015-08-04 (+6d) | 2015-07-30 → 2015-08-05 (+6d) |  |  |

| ID | Task | Start | Finish |
| --- | --- | --- | --- |
| 149 | Fix bug Integration Test | 2015-07-31 → 2015-08-06 (+6d) | 2015-08-03 → 2015-08-07 (+4d) |
| 150 | Execute System Test | 2015-07-31 → 2015-08-06 (+6d) | 2015-08-03 → 2015-08-07 (+4d) |
| 151 | Fix bug System Test | 2015-08-04 → 2015-08-10 (+6d) | 2015-08-05 → 2015-08-11 (+6d) |
| 152 | **Execute Test Part 2** | 2015-08-06 → 2015-08-12 (+6d) | 2015-08-17 → 2015-08-21 (+4d) |
| 153 | Execute Component Test | 2015-08-06 → 2015-08-12 (+6d) | 2015-08-07 → 2015-08-13 (+6d) |
| 154 | Fix bug Component Test | 2015-08-10 → 2015-08-14 (+4d) | 2015-08-11 → 2015-08-17 (+6d) |
| 155 | Execute Integration Test | 2015-08-10 → 2015-08-14 (+4d) | 2015-08-11 → 2015-08-17 (+6d) |
| 156 | Fix bug Integration Test | 2015-08-12 → 2015-08-18 (+6d) | 2015-08-13 → 2015-08-19 (+6d) |
| 157 | Execute System Test | 2015-08-12 → 2015-08-18 (+6d) | 2015-08-13 → 2015-08-19 (+6d) |
| 158 | Fix bug System Test | 2015-08-14 → 2015-08-20 (+6d) | 2015-08-17 → 2015-08-21 (+4d) |
| 159 | Create Test Report first verstion | 2015-08-18 → 2015-08-24 (+6d) | 2015-08-18 → 2015-08-24 (+6d) |
| 160 | Complete Testing | 2015-08-18 → 2015-08-24 (+6d) | 2015-08-18 → 2015-08-24 (+6d) |
| 161 | **User Manual** | 2015-07-27 → 2015-07-31 (+4d) | 2015-07-28 → 2015-08-03 (+6d) |
| 162 | Create Installation guideline | 2015-07-27 → 2015-07-31 (+4d) | 2015-07-27 → 2015-07-31 (+4d) |
| 163 | Create User guideline | 2015-07-27 → 2015-07-31 (+4d) | 2015-07-27 → 2015-07-31 (+4d) |
| 164 | Review + Update guidelines | 2015-07-28 → 2015-08-03 (+6d) | 2015-07-28 → 2015-08-03 (+6d) |
| 165 | **Manage development** | 2015-07-02 → 2015-07-08 (+6d) | 2015-07-08 → 2015-07-14 (+6d) |
| 166 | **Manage scope/cost/time** | 2015-07-02 → 2015-07-08 (+6d) | 2015-07-08 → 2015-07-14 (+6d) |
| 167 | Monitor product changes | 2015-07-02 → 2015-07-08 (+6d) | 2015-07-08 → 2015-07-14 (+6d) |
| 168 | Monitor project changes | 2015-07-02 → 2015-07-08 (+6d) | 2015-07-08 → 2015-07-14 (+6d) |
| 169 | **Manage communications** | 2015-07-02 → 2015-07-08 (+6d) | 2015-07-02 → 2015-07-08 (+6d) |
| 170 | **Implement communications methods and strategies** | 2015-07-02 → 2015-07-08 (+6d) | 2015-07-02 → 2015-07-08 (+6d) |
| 171 | Select tools | 2015-07-02 → 2015-07-08 (+6d) | 2015-07-02 → 2015-07-08 (+6d) |
| 172 | **Distribute information** | 2015-07-02 → 2015-07-08 (+6d) | 2015-07-02 → 2015-07-08 (+6d) |
| 173 | Attend team meeting | 2015-07-02 → 2015-07-08 (+6d) | 2015-07-02 → 2015-07-08 (+6d) |
| 174 | Create status reports | 2015-07-02 → 2015-07-08 (+6d) | 2015-07-02 → 2015-07-08 (+6d) |
| 175 | Create Weekly Report | 2015-07-02 → 2015-07-08 (+6d) | 2015-07-02 → 2015-07-08 (+6d) |
| 176 | Resolve communications problems | 2015-07-02 → 2015-07-08 (+6d) | 2015-07-02 → 2015-07-08 (+6d) |
| 177 | **Manage quality control** | 2015-07-02 → 2015-07-08 (+6d) | 2015-07-02 → 2015-07-08 (+6d) |
| 178 | Monitor product quality | 2015-07-02 → 2015-07-08 (+6d) | 2015-07-02 → 2015-07-08 (+6d) |
| 179 | **Monitor project quality** | 2015-07-02 → 2015-07-08 (+6d) | 2015-07-02 → 2015-07-08 (+6d) |
| 180 | Implement process improvements | 2015-07-02 → 2015-07-08 (+6d) | 2015-07-02 → 2015-07-08 (+6d) |
| 181 | **Manage risk** | 2015-07-02 → 2015-07-08 (+6d) | 2015-07-02 → 2015-07-08 (+6d) |
| 182 | Monitor risks | 2015-07-02 → 2015-07-08 (+6d) | 2015-07-02 → 2015-07-08 (+6d) |
| 183 | Specify responses | 2015-07-02 → 2015-07-08 (+6d) | 2015-07-02 → 2015-07-08 (+6d) |
| 184 | Manage integration | 2015-07-02 → 2015-07-08 (+6d) | 2015-07-02 → 2015-07-08 (+6d) |
| 185 | **Termination** | 2015-08-19 → 2015-08-25 (+6d) | 2015-08-27 → 2015-09-02 (+6d) |
| 186 | **Pre-Closing** | 2015-08-19 → 2015-08-25 (+6d) | 2015-08-20 → 2015-08-26 (+6d) |
| 187 | Training presentation | 2015-08-19 → 2015-08-25 (+6d) | 2015-08-20 → 2015-08-26 (+6d) |
| 188 | **Closing** | 2015-08-24 → 2015-08-28 (+4d) | 2015-08-27 → 2015-09-02 (+6d) |
| 189 | Prepare for presentation | 2015-08-24 → 2015-08-28 (+4d) | 2015-08-26 → 2015-09-01 (+6d) |
| 190 | Represent Capstone Project and Completed | 2015-08-27 → 2015-09-02 (+6d) | 2015-08-27 → 2015-09-02 (+6d) |

## Version 6 (saved 2015-06-10)

Note of the change: Merge branch 'master' of https://github.com/sangnvus/2015SUMJS01

Last finish stays 2015-09-02.

Changed:

| ID | Task | Other |
| --- | --- | --- |
| 58 | **Sofware Requirement Specification** | was named Sofware Requirement Specification [Chỉnh 3 tuần] |

## Version 7 (saved 2015-07-07)

Note of the change: Merge branch 'master' of https://github.com/sangnvus/2015SUMJS01

Last finish 2015-09-02 → 2015-09-08 (+6d).

Changed:

| ID | Task | Start | Finish | Duration | Total float | Predecessors | Other |
| --- | --- | --- | --- | --- | --- | --- | --- |
| 1 | **Fly Away Plus** |  | 2015-09-02 → 2015-09-08 (+6d) | 81d → 84.5d |  |  |  |
| 2 | **Initiation** |  | 2015-05-28 → 2015-06-03 (+6d) | 12d → 15.5d |  |  |  |
| 4 | Uniform idea meeting |  |  |  | 0.5d → 0d | none → 3 |  |
| 5 | **Project Clarification** | 2015-05-13 → 2015-05-14 (+1d) | 2015-05-13 → 2015-05-14 (+1d) |  | 0.5d → 0d |  |  |
| 6 | Clarify project scope | 2015-05-13 → 2015-05-14 (+1d) | 2015-05-13 → 2015-05-14 (+1d) |  | 0.5d → 0d |  |  |
| 7 | Clarify technical requirements | 2015-05-13 → 2015-05-14 (+1d) | 2015-05-13 → 2015-05-14 (+1d) |  | 0.5d → 0d |  |  |
| 8 | Clarify rules in Team | 2015-05-13 → 2015-05-14 (+1d) | 2015-05-13 → 2015-05-14 (+1d) |  | 0.5d → 0d |  |  |
| 9 | Clarify working environments | 2015-05-13 → 2015-05-14 (+1d) | 2015-05-13 → 2015-05-14 (+1d) |  | 0.5d → 0d |  |  |
| 10 | Develop communications plan | 2015-05-13 → 2015-05-14 (+1d) | 2015-05-13 → 2015-05-14 (+1d) |  | 0.5d → 0d |  |  |
| 11 | List project features | 2015-05-13 → 2015-05-14 (+1d) | 2015-05-13 → 2015-05-14 (+1d) | 1d → 0.5d | 11d → 0d | none → 5 |  |
| 12 | Initiate Project structure | 2015-05-13 → 2015-05-15 (+2d) | 2015-05-13 → 2015-05-15 (+2d) | 1d → 0.5d | 11d → 10d | none → 11 |  |
| 13 | Create Coding conventions | 2015-05-13 → 2015-05-15 (+2d) | 2015-05-13 → 2015-05-15 (+2d) |  | 11.5d → 10d | none → 12 |  |
| 14 | **Environment** | 2015-05-14 → 2015-05-15 (+1d) | 2015-05-14 → 2015-05-18 (+4d) | 1d → 1.5d | 0.5d → 0d |  |  |
| 15 | Create guideline of installing and using environments | 2015-05-14 → 2015-05-15 (+1d) | 2015-05-14 → 2015-05-15 (+1d) |  | 0.5d → 0d | none → 11 |  |
| 16 | Setup TortoiseGit | 2015-05-14 → 2015-05-15 (+1d) | 2015-05-14 → 2015-05-15 (+1d) | 0.5d → 1h | 0.5d → 0d |  |  |
| 17 | Setup Visual Studio 2013 Ultimate | 2015-05-14 → 2015-05-15 (+1d) | 2015-05-14 → 2015-05-15 (+1d) | 0.5d → 3h | 1d → 0d | none → 16 |  |
| 18 | Setup Microsoft SQL Server 2012 | 2015-05-14 → 2015-05-18 (+4d) | 2015-05-14 → 2015-05-18 (+4d) | 0.5d → 1h | 1d → 0d | none → 17 |  |
| 19 | Training environments meeting | 2015-05-14 → 2015-05-18 (+4d) | 2015-05-14 → 2015-05-18 (+4d) | 0.5d → 3h | 1d → 0d | none → 18 |  |
| 20 | **Technology research** | 2015-05-15 → 2015-05-18 (+3d) | 2015-05-27 → 2015-05-29 (+2d) |  | 1d → 3d |  |  |
| 21 | Research technologies to be used in project | 2015-05-15 → 2015-05-18 (+3d) | 2015-05-19 → 2015-05-21 (+2d) |  | 7d → 9d |  | resources DucHN → HaiDT |
| 22 | Study .NET MVC5 | 2015-05-15 → 2015-05-18 (+3d) | 2015-05-20 → 2015-05-22 (+2d) |  | 1d → 3d |  | resources DevTeam → HoangNM |
| 23 | Study Bootstrap | 2015-05-21 → 2015-05-22 (+1d) | 2015-05-21 → 2015-05-25 (+4d) |  | 1d → 3d |  | resources DevTeam → HoangNM |
| 24 | Study Javascript, jQuery | 2015-05-22 → 2015-05-25 (+3d) | 2015-05-27 → 2015-05-29 (+2d) |  | 1d → 3d |  | resources DevTeam → HoangNM |
| 25 | **Project Introduction** | 2015-05-15 → 2015-05-18 (+3d) | 2015-05-22 → 2015-05-25 (+3d) |  | 0.5d → 2.5d | none → 14 |  |
| 26 | Create "Project Introduction" document | 2015-05-15 → 2015-05-18 (+3d) | 2015-05-19 → 2015-05-21 (+2d) |  | 0.5d → 2.5d | 14 → none | resources ThuyLM → DocTeam |
| 27 | Peer review "Project Introduction" document | 2015-05-20 → 2015-05-21 (+1d) | 2015-05-20 → 2015-05-21 (+1d) |  | 0.5d → 2.5d |  |  |
| 28 | Update "Project Introduction" document draft | 2015-05-20 → 2015-05-22 (+2d) | 2015-05-21 → 2015-05-22 (+1d) |  | 0.5d → 2.5d |  | resources DucHN → DocTeam |
| 29 | Update "Project Introduction" based on instructor's comments | 2015-05-21 → 2015-05-25 (+4d) | 2015-05-22 → 2015-05-25 (+3d) |  | 0.5d → 2.5d |  | resources ThuyLM → DocTeam |
| 30 | Summit Project Introduction | 2015-05-22 → 2015-05-25 (+3d) | 2015-05-22 → 2015-05-25 (+3d) |  | 0.5d → 2.5d |  |  |
| 31 | Kick-off meeting | 2015-05-22 → 2015-05-26 (+4d) | 2015-05-22 → 2015-05-26 (+4d) |  | 4d → 6d |  |  |
| 32 | **Q&A sheet** | 2015-05-22 → 2015-05-26 (+4d) | 2015-05-25 → 2015-05-27 (+2d) |  | 3d → 5d |  |  |
| 33 | Create Q&A | 2015-05-22 → 2015-05-26 (+4d) | 2015-05-22 → 2015-05-26 (+4d) |  | 3d → 5d |  |  |
| 34 | Update Q&A sheet | 2015-05-25 → 2015-05-26 (+1d) | 2015-05-25 → 2015-05-26 (+1d) |  | 3d → 5d |  |  |
| 35 | Translate Q&A sheet | 2015-05-25 → 2015-05-27 (+2d) | 2015-05-25 → 2015-05-27 (+2d) |  | 3d → 5d |  |  |
| 36 | **Project Plan** | 2015-05-13 → 2015-05-18 (+5d) | 2015-05-28 → 2015-06-03 (+6d) |  |  | none → 14 |  |
| 37 | Develop project definition | 2015-05-13 → 2015-05-18 (+5d) | 2015-05-14 → 2015-05-20 (+6d) |  |  |  |  |
| 38 | Create Project plan document | 2015-05-25 → 2015-05-20 (-5d) | 2015-05-25 → 2015-05-21 (-4d) |  |  | 40 → 37 | was named Create project plan document |
| 39 | Create Work BreakDown Structure | 2015-05-15 → 2015-05-21 (+6d) | 2015-05-19 → 2015-05-26 (+7d) |  |  | 37 → 38 | was named Work BreakDown Structure |
| 40 | Create Project schedule document | 2015-05-20 → 2015-05-26 (+6d) | 2015-05-22 → 2015-05-29 (+7d) |  |  |  | was named Create project schedule document |
| 41 | Create CM Plan document | 2015-05-26 → 2015-05-29 (+3d) | 2015-05-26 → 2015-05-29 (+3d) |  |  | 38 → 40 |  |
| 42 | Review & get comment of Project Plan | 2015-05-26 → 2015-06-01 (+6d) | 2015-05-26 → 2015-06-01 (+6d) |  |  |  |  |
| 43 | Develop Risk Register | 2015-05-27 → 2015-06-01 (+5d) | 2015-05-27 → 2015-06-01 (+5d) |  | 1.5d → 7d |  |  |
| 44 | Update Project Plan documents (Schedule, Project Plan in MS Word, CM Plan) | 2015-05-27 → 2015-06-01 (+5d) | 2015-05-27 → 2015-06-02 (+6d) |  |  |  |  |
| 45 | Create PP Review check list | 2015-05-28 → 2015-06-02 (+5d) | 2015-05-28 → 2015-06-02 (+5d) |  |  |  |  |
| 46 | Summit Project Plan Final version | 2015-05-28 → 2015-06-03 (+6d) | 2015-05-28 → 2015-06-03 (+6d) |  |  |  |  |
| 47 | **Requirement** | 2015-05-22 → 2015-05-26 (+4d) | 2015-05-28 → 2015-05-29 (+1d) |  | 0.5d → 2.5d |  |  |
| 48 | **User Requirement** | 2015-05-22 → 2015-05-26 (+4d) | 2015-05-26 → 2015-05-27 (+1d) |  | 0.5d → 2.5d |  |  |
| 49 | Develop brief "User Requirements Specification" document | 2015-05-22 → 2015-05-26 (+4d) | 2015-05-25 → 2015-05-26 (+1d) |  | 0.5d → 2.5d |  |  |
| 50 | Peer review brief "User Requirements Specification" document | 2015-05-25 → 2015-05-27 (+2d) | 2015-05-25 → 2015-05-27 (+2d) |  | 0.5d → 2.5d |  |  |
| 51 | Update brief "User Requirements Specification" document | 2015-05-26 → 2015-05-27 (+1d) | 2015-05-26 → 2015-05-27 (+1d) |  | 0.5d → 2.5d |  |  |
| 52 | **Mock-up screens** | 2015-05-26 → 2015-05-28 (+2d) | 2015-05-28 → 2015-05-29 (+1d) |  | 0.5d → 2.5d |  |  |
| 53 | Collect business requirements and processes | 2015-05-26 → 2015-05-28 (+2d) | 2015-05-26 → 2015-05-28 (+2d) |  | 0.5d → 2.5d |  |  |
| 54 | Develop main features' mockup screens | 2015-05-27 → 2015-05-28 (+1d) | 2015-05-27 → 2015-05-29 (+2d) |  | 0.5d → 2.5d |  |  |
| 55 | Review and edit screen main features' mockup screens | 2015-05-28 → 2015-05-29 (+1d) | 2015-05-28 → 2015-05-29 (+1d) |  | 0.5d → 2.5d |  |  |
| 56 | Complete main features' mockup screens | 2015-05-28 → 2015-05-29 (+1d) | 2015-05-28 → 2015-05-29 (+1d) |  | 0.5d → 2.5d |  |  |
| 57 | **Solution** | 2015-05-29 → 2015-06-03 (+5d) | 2015-07-02 → 2015-07-08 (+6d) |  |  |  |  |
| 58 | **Sofware Requirement Specification** | 2015-05-29 → 2015-06-03 (+5d) | 2015-06-17 → 2015-06-23 (+6d) |  |  |  |  |
| 59 | **Non-functional Requirements Specification** | 2015-06-17 → 2015-06-22 (+5d) | 2015-06-17 → 2015-06-23 (+6d) |  |  |  |  |
| 60 | Develop User Interface requirements | 2015-06-17 → 2015-06-22 (+5d) | 2015-06-17 → 2015-06-23 (+6d) |  |  |  |  |
| 61 | Develop Performance requirements | 2015-06-17 → 2015-06-22 (+5d) | 2015-06-17 → 2015-06-23 (+6d) |  |  |  |  |
| 62 | **Functional Requirement Specification** | 2015-05-29 → 2015-06-03 (+5d) | 2015-06-16 → 2015-06-22 (+6d) |  |  |  |  |
| 63 | **Part 1** | 2015-05-29 → 2015-06-03 (+5d) | 2015-06-04 → 2015-06-10 (+6d) |  |  |  |  |
| 64 | Homepage Module | 2015-05-29 → 2015-06-03 (+5d) | 2015-06-01 → 2015-06-05 (+4d) |  | 2d → 3d |  |  |
| 65 | User personal page Module | 2015-05-29 → 2015-06-03 (+5d) | 2015-05-29 → 2015-06-04 (+6d) |  |  |  |  |
| 66 | Admin Module | 2015-06-01 → 2015-06-04 (+3d) | 2015-06-01 → 2015-06-05 (+4d) |  | 2d → 3d |  |  |
| 67 | Search Module | 2015-06-01 → 2015-06-04 (+3d) | 2015-06-01 → 2015-06-05 (+4d) |  |  |  |  |
| 68 | Login/Logout Module | 2015-06-02 → 2015-06-05 (+3d) | 2015-06-02 → 2015-06-08 (+6d) |  | 1d → 2d |  |  |
| 69 | Friend Module | 2015-06-02 → 2015-06-05 (+3d) | 2015-06-03 → 2015-06-09 (+6d) |  |  |  |  |
| 70 | Room module | 2015-06-04 → 2015-06-09 (+5d) | 2015-06-04 → 2015-06-10 (+6d) |  |  |  |  |
| 71 | **Part 2** | 2015-06-09 → 2015-06-12 (+3d) | 2015-06-16 → 2015-06-22 (+6d) |  |  |  |  |

| ID | Task | Start | Finish | Total float |
| --- | --- | --- | --- | --- |
| 72 | Suggestion Module | 2015-06-09 → 2015-06-12 (+3d) | 2015-06-09 → 2015-06-15 (+6d) |  |
| 73 | Sharing Module | 2015-06-09 → 2015-06-12 (+3d) | 2015-06-09 → 2015-06-15 (+6d) |  |
| 74 | Report Module | 2015-06-10 → 2015-06-15 (+5d) | 2015-06-10 → 2015-06-16 (+6d) |  |
| 75 | Planing trip helper Module | 2015-06-10 → 2015-06-15 (+5d) | 2015-06-12 → 2015-06-18 (+6d) |  |
| 76 | Chat module | 2015-06-15 → 2015-06-18 (+3d) | 2015-06-16 → 2015-06-22 (+6d) |  |
| 77 | **System Architectural Design** | 2015-05-29 → 2015-06-03 (+5d) | 2015-06-04 → 2015-06-10 (+6d) |  |
| 78 | Define the system structure and unify system features | 2015-05-29 → 2015-06-03 (+5d) | 2015-06-01 → 2015-06-05 (+4d) | 4d → 8d |
| 79 | Study the common System Architetures | 2015-06-02 → 2015-06-05 (+3d) | 2015-06-02 → 2015-06-08 (+6d) | 4d → 8d |
| 80 | Make choice of System Architeture | 2015-06-03 → 2015-06-08 (+5d) | 2015-06-03 → 2015-06-09 (+6d) | 4d → 8d |
| 81 | Complete Architecture Design version 1.0 | 2015-06-04 → 2015-06-10 (+6d) | 2015-06-04 → 2015-06-10 (+6d) | 4d → 8d |
| 82 | **Detailed Design** | 2015-06-08 → 2015-06-11 (+3d) | 2015-07-02 → 2015-07-08 (+6d) |  |
| 83 | **Database design** | 2015-06-17 → 2015-06-22 (+5d) | 2015-06-25 → 2015-07-01 (+6d) |  |
| 84 | Organize information to Database tables | 2015-06-17 → 2015-06-22 (+5d) | 2015-06-19 → 2015-06-25 (+6d) |  |
| 85 | Define tables' relationships | 2015-06-22 → 2015-06-25 (+3d) | 2015-06-22 → 2015-06-26 (+4d) |  |
| 86 | Apply normalization rules to Database design | 2015-06-23 → 2015-06-26 (+3d) | 2015-06-23 → 2015-06-29 (+6d) |  |
| 87 | Refine Database design | 2015-06-24 → 2015-06-29 (+5d) | 2015-06-25 → 2015-07-01 (+6d) |  |
| 88 | Refine Database Design | 2015-06-26 → 2015-07-01 (+5d) | 2015-06-26 → 2015-07-02 (+6d) |  |
| 89 | **Screen design** | 2015-06-08 → 2015-06-11 (+3d) | 2015-06-10 → 2015-06-16 (+6d) |  |
| 90 | Create Screen Flow digram | 2015-06-08 → 2015-06-11 (+3d) | 2015-06-08 → 2015-06-12 (+4d) |  |
| 91 | Create Screen Definition | 2015-06-09 → 2015-06-12 (+3d) | 2015-06-09 → 2015-06-15 (+6d) |  |
| 92 | Create Screen Design | 2015-06-10 → 2015-06-15 (+5d) | 2015-06-10 → 2015-06-16 (+6d) |  |
| 93 | **Class/Component Design** | 2015-06-26 → 2015-07-01 (+5d) | 2015-07-02 → 2015-07-08 (+6d) |  |
| 94 | Create Data models | 2015-06-26 → 2015-07-01 (+5d) | 2015-06-26 → 2015-07-02 (+6d) |  |
| 95 | List components of the system | 2015-06-29 → 2015-07-02 (+3d) | 2015-06-29 → 2015-07-03 (+4d) |  |
| 96 | Break modules into classes | 2015-06-30 → 2015-07-03 (+3d) | 2015-06-30 → 2015-07-06 (+6d) |  |
| 97 | Create Class diagram | 2015-07-01 → 2015-07-06 (+5d) | 2015-07-02 → 2015-07-08 (+6d) |  |
| 98 | Create Class description document | 2015-07-01 → 2015-07-06 (+5d) | 2015-07-01 → 2015-07-07 (+6d) |  |
| 99 | Create Flow diagram | 2015-06-30 → 2015-07-03 (+3d) | 2015-06-30 → 2015-07-06 (+6d) |  |
| 100 | Create Progress Report 2 | 2015-07-01 → 2015-07-06 (+5d) | 2015-07-01 → 2015-07-07 (+6d) |  |
| 101 | Create Design review checklists | 2015-07-02 → 2015-07-07 (+5d) | 2015-07-02 → 2015-07-08 (+6d) |  |
| 102 | **Project Management** | 2015-06-05 → 2015-06-10 (+5d) | 2015-06-08 → 2015-06-12 (+4d) |  |
| 103 | Update project plan | 2015-06-05 → 2015-06-10 (+5d) | 2015-06-08 → 2015-06-12 (+4d) | 14d → 18d |
| 104 | Coding About/Contact Page | 2015-06-05 → 2015-06-10 (+5d) | 2015-06-08 → 2015-06-12 (+4d) | 14d → 18d |
| 105 | Coding Login with Facebook and Google+ feature | 2015-06-05 → 2015-06-10 (+5d) | 2015-06-05 → 2015-06-11 (+6d) | 15d → 19d |
| 106 | **Test** | 2015-05-29 → 2015-06-03 (+5d) | 2015-06-08 → 2015-06-12 (+4d) |  |
| 107 | Create Test plan | 2015-05-29 → 2015-06-03 (+5d) | 2015-06-02 → 2015-06-08 (+6d) | 14d → 18d |
| 108 | Review + Update Test plan | 2015-06-03 → 2015-06-08 (+5d) | 2015-06-03 → 2015-06-09 (+6d) | 14d → 18d |
| 109 | Test plan approved | 2015-06-03 → 2015-06-09 (+6d) | 2015-06-03 → 2015-06-09 (+6d) | 14d → 18d |
| 110 | Start writing Test cases | 2015-06-04 → 2015-06-09 (+5d) | 2015-06-08 → 2015-06-12 (+4d) | 14d → 18d |
| 111 | **Construction** | 2015-07-02 → 2015-07-08 (+6d) | 2015-08-24 → 2015-08-28 (+4d) |  |
| 112 | **Design** | 2015-07-03 → 2015-07-08 (+5d) | 2015-07-07 → 2015-07-13 (+6d) |  |
| 113 | Refine Design document | 2015-07-03 → 2015-07-08 (+5d) | 2015-07-07 → 2015-07-13 (+6d) |  |
| 114 | **Coding** | 2015-07-08 → 2015-07-13 (+5d) | 2015-07-30 → 2015-08-05 (+6d) |  |
| 115 | Build prototype | 2015-07-08 → 2015-07-13 (+5d) | 2015-07-09 → 2015-07-15 (+6d) |  |
| 116 | Prototype approved | 2015-07-09 → 2015-07-15 (+6d) | 2015-07-09 → 2015-07-15 (+6d) |  |
| 117 | **Coding product (Continue)** | 2015-07-10 → 2015-07-15 (+5d) | 2015-07-28 → 2015-08-03 (+6d) |  |
| 118 | Develop UI | 2015-07-10 → 2015-07-15 (+5d) | 2015-07-16 → 2015-07-22 (+6d) |  |
| 119 | Develop objects | 2015-07-10 → 2015-07-15 (+5d) | 2015-07-13 → 2015-07-17 (+4d) |  |
| 120 | Create system documentation | 2015-07-10 → 2015-07-15 (+5d) | 2015-07-14 → 2015-07-20 (+6d) |  |
| 121 | **Coding Modules** | 2015-07-15 → 2015-07-20 (+5d) | 2015-07-28 → 2015-08-03 (+6d) |  |
| 122 | **Part 1** | 2015-07-15 → 2015-07-20 (+5d) | 2015-07-21 → 2015-07-27 (+6d) |  |
| 123 | Homepage Module | 2015-07-15 → 2015-07-20 (+5d) | 2015-07-16 → 2015-07-22 (+6d) |  |
| 124 | User personal page Module | 2015-07-17 → 2015-07-22 (+5d) | 2015-07-17 → 2015-07-23 (+6d) |  |
| 125 | Admin Module | 2015-07-15 → 2015-07-20 (+5d) | 2015-07-16 → 2015-07-22 (+6d) |  |
| 126 | Search Module | 2015-07-17 → 2015-07-22 (+5d) | 2015-07-17 → 2015-07-23 (+6d) |  |
| 127 | Login/Logout Module | 2015-07-17 → 2015-07-22 (+5d) | 2015-07-17 → 2015-07-23 (+6d) |  |
| 128 | Friend Module | 2015-07-20 → 2015-07-23 (+3d) | 2015-07-21 → 2015-07-27 (+6d) |  |
| 129 | Room module | 2015-07-20 → 2015-07-23 (+3d) | 2015-07-21 → 2015-07-27 (+6d) |  |
| 130 | **Part 2** | 2015-07-23 → 2015-07-28 (+5d) | 2015-07-28 → 2015-08-03 (+6d) |  |
| 131 | Suggestion Module | 2015-07-23 → 2015-07-28 (+5d) | 2015-07-24 → 2015-07-30 (+6d) |  |
| 132 | Sharing Module | 2015-07-27 → 2015-07-30 (+3d) | 2015-07-27 → 2015-07-31 (+4d) |  |
| 133 | Report Module | 2015-07-28 → 2015-07-31 (+3d) | 2015-07-28 → 2015-08-03 (+6d) |  |
| 134 | Chat module | 2015-07-23 → 2015-07-28 (+5d) | 2015-07-24 → 2015-07-30 (+6d) |  |
| 135 | Planing trip helper Module | 2015-07-27 → 2015-07-30 (+3d) | 2015-07-28 → 2015-08-03 (+6d) |  |
| 136 | Product development completes | 2015-07-30 → 2015-08-05 (+6d) | 2015-07-30 → 2015-08-05 (+6d) |  |
| 137 | **Testing** | 2015-07-02 → 2015-07-08 (+6d) | 2015-08-24 → 2015-08-28 (+4d) |  |
| 138 | **Writing Test cases (Continue)** | 2015-07-03 → 2015-07-08 (+5d) | 2015-07-23 → 2015-07-29 (+6d) |  |
| 139 | Create Integration Test Case | 2015-07-03 → 2015-07-08 (+5d) | 2015-07-09 → 2015-07-15 (+6d) |  |
| 140 | Update and review Integration Test Case | 2015-07-14 → 2015-07-17 (+3d) | 2015-07-16 → 2015-07-22 (+6d) |  |
| 141 | Create System Test Case | 2015-07-17 → 2015-07-22 (+5d) | 2015-07-21 → 2015-07-27 (+6d) |  |

| ID | Task | Start | Finish |
| --- | --- | --- | --- |
| 142 | Update and review System Test Case | 2015-07-22 → 2015-07-27 (+5d) | 2015-07-23 → 2015-07-29 (+6d) |
| 143 | Writing Test cases completes | 2015-07-02 → 2015-07-08 (+6d) | 2015-07-02 → 2015-07-08 (+6d) |
| 144 | **Execute Test** | 2015-07-31 → 2015-08-05 (+5d) | 2015-08-24 → 2015-08-28 (+4d) |
| 145 | **Execute Test Part 1** | 2015-07-31 → 2015-08-05 (+5d) | 2015-08-11 → 2015-08-17 (+6d) |
| 146 | Execute Component Test | 2015-07-31 → 2015-08-05 (+5d) | 2015-08-03 → 2015-08-07 (+4d) |
| 147 | Fix bug Component Test | 2015-08-04 → 2015-08-07 (+3d) | 2015-08-05 → 2015-08-11 (+6d) |
| 148 | Execute Integration Test | 2015-08-04 → 2015-08-07 (+3d) | 2015-08-05 → 2015-08-11 (+6d) |
| 149 | Fix bug Integration Test | 2015-08-06 → 2015-08-11 (+5d) | 2015-08-07 → 2015-08-13 (+6d) |
| 150 | Execute System Test | 2015-08-06 → 2015-08-11 (+5d) | 2015-08-07 → 2015-08-13 (+6d) |
| 151 | Fix bug System Test | 2015-08-10 → 2015-08-13 (+3d) | 2015-08-11 → 2015-08-17 (+6d) |
| 152 | **Execute Test Part 2** | 2015-08-12 → 2015-08-17 (+5d) | 2015-08-21 → 2015-08-27 (+6d) |
| 153 | Execute Component Test | 2015-08-12 → 2015-08-17 (+5d) | 2015-08-13 → 2015-08-19 (+6d) |
| 154 | Fix bug Component Test | 2015-08-14 → 2015-08-19 (+5d) | 2015-08-17 → 2015-08-21 (+4d) |
| 155 | Execute Integration Test | 2015-08-14 → 2015-08-19 (+5d) | 2015-08-17 → 2015-08-21 (+4d) |
| 156 | Fix bug Integration Test | 2015-08-18 → 2015-08-21 (+3d) | 2015-08-19 → 2015-08-25 (+6d) |
| 157 | Execute System Test | 2015-08-18 → 2015-08-21 (+3d) | 2015-08-19 → 2015-08-25 (+6d) |
| 158 | Fix bug System Test | 2015-08-20 → 2015-08-25 (+5d) | 2015-08-21 → 2015-08-27 (+6d) |
| 159 | Create Test Report first verstion | 2015-08-24 → 2015-08-27 (+3d) | 2015-08-24 → 2015-08-28 (+4d) |
| 160 | Complete Testing | 2015-08-24 → 2015-08-28 (+4d) | 2015-08-24 → 2015-08-28 (+4d) |
| 161 | **User Manual** | 2015-07-31 → 2015-08-05 (+5d) | 2015-08-03 → 2015-08-07 (+4d) |
| 162 | Create Installation guideline | 2015-07-31 → 2015-08-05 (+5d) | 2015-07-31 → 2015-08-06 (+6d) |
| 163 | Create User guideline | 2015-07-31 → 2015-08-05 (+5d) | 2015-07-31 → 2015-08-06 (+6d) |
| 164 | Review + Update guidelines | 2015-08-03 → 2015-08-06 (+3d) | 2015-08-03 → 2015-08-07 (+4d) |
| 165 | **Manage development** | 2015-07-08 → 2015-07-13 (+5d) | 2015-07-14 → 2015-07-20 (+6d) |
| 166 | **Manage scope/cost/time** | 2015-07-08 → 2015-07-13 (+5d) | 2015-07-14 → 2015-07-20 (+6d) |
| 167 | Monitor product changes | 2015-07-08 → 2015-07-13 (+5d) | 2015-07-14 → 2015-07-20 (+6d) |
| 168 | Monitor project changes | 2015-07-08 → 2015-07-13 (+5d) | 2015-07-14 → 2015-07-20 (+6d) |
| 169 | **Manage communications** | 2015-07-08 → 2015-07-13 (+5d) | 2015-07-08 → 2015-07-14 (+6d) |
| 170 | **Implement communications methods and strategies** | 2015-07-08 → 2015-07-13 (+5d) | 2015-07-08 → 2015-07-14 (+6d) |
| 171 | Select tools | 2015-07-08 → 2015-07-13 (+5d) | 2015-07-08 → 2015-07-14 (+6d) |
| 172 | **Distribute information** | 2015-07-08 → 2015-07-13 (+5d) | 2015-07-08 → 2015-07-14 (+6d) |
| 173 | Attend team meeting | 2015-07-08 → 2015-07-13 (+5d) | 2015-07-08 → 2015-07-14 (+6d) |
| 174 | Create status reports | 2015-07-08 → 2015-07-13 (+5d) | 2015-07-08 → 2015-07-14 (+6d) |
| 175 | Create Weekly Report | 2015-07-08 → 2015-07-13 (+5d) | 2015-07-08 → 2015-07-14 (+6d) |
| 176 | Resolve communications problems | 2015-07-08 → 2015-07-13 (+5d) | 2015-07-08 → 2015-07-14 (+6d) |
| 177 | **Manage quality control** | 2015-07-08 → 2015-07-13 (+5d) | 2015-07-08 → 2015-07-14 (+6d) |
| 178 | Monitor product quality | 2015-07-08 → 2015-07-13 (+5d) | 2015-07-08 → 2015-07-14 (+6d) |
| 179 | **Monitor project quality** | 2015-07-08 → 2015-07-13 (+5d) | 2015-07-08 → 2015-07-14 (+6d) |
| 180 | Implement process improvements | 2015-07-08 → 2015-07-13 (+5d) | 2015-07-08 → 2015-07-14 (+6d) |
| 181 | **Manage risk** | 2015-07-08 → 2015-07-13 (+5d) | 2015-07-08 → 2015-07-14 (+6d) |
| 182 | Monitor risks | 2015-07-08 → 2015-07-13 (+5d) | 2015-07-08 → 2015-07-14 (+6d) |
| 183 | Specify responses | 2015-07-08 → 2015-07-13 (+5d) | 2015-07-08 → 2015-07-14 (+6d) |
| 184 | Manage integration | 2015-07-08 → 2015-07-13 (+5d) | 2015-07-08 → 2015-07-14 (+6d) |
| 185 | **Termination** | 2015-08-25 → 2015-08-28 (+3d) | 2015-09-02 → 2015-09-08 (+6d) |
| 186 | **Pre-Closing** | 2015-08-25 → 2015-08-28 (+3d) | 2015-08-26 → 2015-09-01 (+6d) |
| 187 | Training presentation | 2015-08-25 → 2015-08-28 (+3d) | 2015-08-26 → 2015-09-01 (+6d) |
| 188 | **Closing** | 2015-08-28 → 2015-09-02 (+5d) | 2015-09-02 → 2015-09-08 (+6d) |
| 189 | Prepare for presentation | 2015-08-28 → 2015-09-02 (+5d) | 2015-09-01 → 2015-09-07 (+6d) |
| 190 | Represent Capstone Project and Completed | 2015-09-02 → 2015-09-07 (+5d) | 2015-09-02 → 2015-09-08 (+6d) |

## Version 8 (saved 2015-08-26)

Note of the change: refactor property name

Last finish 2015-09-08 → 2015-08-26 (-13d).

Added:

| ID | Task | Duration | Start | Finish |
| --- | --- | --- | --- | --- |
| 3 | **Form up** | 1d | 2015-05-13 | 2015-05-13 |

Changed:

| ID | Task | Start | Finish | Duration | Total float | Predecessors | Other |
| --- | --- | --- | --- | --- | --- | --- | --- |
| 1 | **Fly Away Plus** |  | 2015-09-08 → 2015-08-26 (-13d) | 84.5d → 76d |  |  |  |
| 2 | **Initiation** |  | 2015-06-03 → 2015-06-02 (-1d) | 15.5d → 15d |  |  |  |
| 6 | **Project Clarification** | 2015-05-14 → 2015-05-13 (-1d) |  | 0.5d → 1.5d |  |  |  |
| 12 | List project features | 2015-05-14 → 2015-05-13 (-1d) | 2015-05-14 → 2015-05-13 (-1d) |  |  | 6 → none |  |
| 13 | Initiate Project structure | 2015-05-15 → 2015-05-13 (-2d) | 2015-05-15 → 2015-05-13 (-2d) |  | 10d → 0d |  |  |
| 14 | Create Coding conventions | 2015-05-15 → 2015-05-14 (-1d) | 2015-05-15 → 2015-05-14 (-1d) |  | 10d → 0d |  |  |
| 15 | **Environment** | 2015-05-15 → 2015-05-14 (-1d) | 2015-05-18 → 2015-05-15 (-3d) |  |  |  |  |
| 16 | Create guideline of installing and using environments | 2015-05-15 → 2015-05-14 (-1d) | 2015-05-15 → 2015-05-14 (-1d) |  |  |  |  |
| 19 | Setup Microsoft SQL Server 2012 | 2015-05-18 → 2015-05-15 (-3d) | 2015-05-18 → 2015-05-15 (-3d) |  |  |  |  |
| 20 | Training environments meeting | 2015-05-18 → 2015-05-15 (-3d) | 2015-05-18 → 2015-05-15 (-3d) |  |  |  |  |
| 21 | **Technology research** |  | 2015-05-29 → 2015-05-28 (-1d) |  |  |  |  |
| 22 | Research technologies to be used in project |  | 2015-05-21 → 2015-05-20 (-1d) |  |  |  |  |
| 23 | Study .NET MVC5 |  | 2015-05-22 → 2015-05-21 (-1d) |  |  |  |  |
| 24 | Study Bootstrap |  | 2015-05-25 → 2015-05-22 (-3d) |  |  |  |  |
| 25 | Study Javascript, jQuery |  | 2015-05-29 → 2015-05-28 (-1d) |  |  |  |  |
| 27 | Create "Project Introduction" document |  | 2015-05-21 → 2015-05-20 (-1d) |  |  |  |  |
| 29 | Update "Project Introduction" document draft | 2015-05-22 → 2015-05-21 (-1d) |  |  |  |  |  |
| 30 | Update "Project Introduction" based on instructor's comments | 2015-05-25 → 2015-05-22 (-3d) |  |  |  |  |  |
| 32 | Kick-off meeting | 2015-05-26 → 2015-05-25 (-1d) | 2015-05-26 → 2015-05-25 (-1d) |  |  |  |  |
| 33 | **Q&A sheet** | 2015-05-26 → 2015-05-25 (-1d) | 2015-05-27 → 2015-05-26 (-1d) |  |  |  |  |
| 34 | Create Q&A | 2015-05-26 → 2015-05-25 (-1d) | 2015-05-26 → 2015-05-25 (-1d) |  |  |  |  |
| 36 | Translate Q&A sheet | 2015-05-27 → 2015-05-26 (-1d) | 2015-05-27 → 2015-05-26 (-1d) |  |  |  |  |
| 37 | **Project Plan** |  | 2015-06-03 → 2015-06-02 (-1d) |  |  |  |  |
| 38 | Develop project definition |  | 2015-05-20 → 2015-05-19 (-1d) |  |  |  |  |
| 39 | Create Project plan document |  | 2015-05-21 → 2015-05-20 (-1d) |  |  |  |  |
| 40 | Create Work BreakDown Structure |  | 2015-05-26 → 2015-05-25 (-1d) |  |  |  |  |
| 41 | Create Project schedule document |  | 2015-05-29 → 2015-05-28 (-1d) |  |  |  |  |
| 43 | Review & get comment of Project Plan | 2015-06-01 → 2015-05-29 (-3d) | 2015-06-01 → 2015-05-29 (-3d) |  |  |  |  |
| 45 | Update Project Plan documents (Schedule, Project Plan in MS Word, CM Plan) |  | 2015-06-02 → 2015-06-01 (-1d) |  |  |  |  |
| 47 | Summit Project Plan Final version | 2015-06-03 → 2015-06-02 (-1d) | 2015-06-03 → 2015-06-02 (-1d) |  |  |  |  |
| 48 | **Requirement** | 2015-05-26 → 2015-05-25 (-1d) |  |  |  |  |  |
| 49 | **User Requirement** | 2015-05-26 → 2015-05-25 (-1d) |  |  |  |  |  |
| 50 | Develop brief "User Requirements Specification" document | 2015-05-26 → 2015-05-25 (-1d) |  |  |  |  |  |
| 51 | Peer review brief "User Requirements Specification" document | 2015-05-27 → 2015-05-26 (-1d) | 2015-05-27 → 2015-05-26 (-1d) |  |  |  |  |
| 53 | **Mock-up screens** | 2015-05-28 → 2015-05-27 (-1d) |  |  |  |  |  |
| 54 | Collect business requirements and processes | 2015-05-28 → 2015-05-27 (-1d) | 2015-05-28 → 2015-05-27 (-1d) |  |  |  |  |
| 55 | Develop main features' mockup screens |  | 2015-05-29 → 2015-05-28 (-1d) |  |  |  |  |
| 58 | **Solution** |  | 2015-07-08 → 2015-07-07 (-1d) |  |  |  |  |
| 59 | **Sofware Requirement Specification** |  | 2015-06-23 → 2015-06-22 (-1d) |  |  |  |  |
| 60 | **Non-functional Requirements Specification** |  | 2015-06-23 → 2015-06-22 (-1d) |  |  |  |  |
| 61 | Develop User Interface requirements |  | 2015-06-23 → 2015-06-22 (-1d) |  |  |  |  |
| 62 | Develop Performance requirements |  | 2015-06-23 → 2015-06-22 (-1d) |  |  |  |  |
| 63 | **Functional Requirement Specification** |  | 2015-06-22 → 2015-06-19 (-3d) |  |  |  |  |
| 64 | **Part 1** |  | 2015-06-10 → 2015-06-09 (-1d) |  |  |  |  |
| 65 | Homepage Module |  | 2015-06-05 → 2015-06-04 (-1d) |  |  |  |  |
| 66 | User personal page Module |  | 2015-06-04 → 2015-06-03 (-1d) |  |  |  |  |
| 67 | Admin Module |  | 2015-06-05 → 2015-06-04 (-1d) |  |  |  |  |
| 68 | Search Module |  | 2015-06-05 → 2015-06-04 (-1d) |  |  |  |  |
| 69 | Login/Logout Module |  | 2015-06-08 → 2015-06-05 (-3d) |  |  |  |  |
| 70 | Friend Module |  | 2015-06-09 → 2015-06-08 (-1d) |  |  |  |  |
| 71 | Room module |  | 2015-06-10 → 2015-06-09 (-1d) |  |  |  |  |
| 72 | **Part 2** |  | 2015-06-22 → 2015-06-19 (-3d) |  |  |  |  |
| 73 | Suggestion Module |  | 2015-06-15 → 2015-06-12 (-3d) |  |  |  |  |
| 74 | Sharing Module |  | 2015-06-15 → 2015-06-12 (-3d) |  |  |  |  |
| 75 | Report Module |  | 2015-06-16 → 2015-06-15 (-1d) |  |  |  |  |
| 76 | Planing Module |  | 2015-06-18 → 2015-06-17 (-1d) |  |  |  | was named Planing trip helper Module |
| 77 | Chat module |  | 2015-06-22 → 2015-06-19 (-3d) |  |  |  |  |
| 78 | **System Architectural Design** |  | 2015-06-10 → 2015-06-09 (-1d) |  |  |  |  |
| 79 | Define the system structure and unify system features |  | 2015-06-05 → 2015-06-04 (-1d) |  |  |  |  |
| 80 | Study the common System Architetures |  | 2015-06-08 → 2015-06-05 (-3d) |  |  |  |  |
| 81 | Make choice of System Architeture |  | 2015-06-09 → 2015-06-08 (-1d) |  |  |  |  |
| 82 | Complete Architecture Design version 1.0 | 2015-06-10 → 2015-06-09 (-1d) | 2015-06-10 → 2015-06-09 (-1d) |  |  |  |  |
| 83 | **Detailed Design** |  | 2015-07-08 → 2015-07-07 (-1d) |  |  |  |  |
| 84 | **Database design** |  | 2015-07-01 → 2015-06-30 (-1d) |  |  |  |  |
| 85 | Organize information to Database tables |  | 2015-06-25 → 2015-06-24 (-1d) |  |  |  |  |
| 86 | Define tables' relationships |  | 2015-06-26 → 2015-06-25 (-1d) |  |  |  |  |
| 87 | Apply normalization rules to Database design |  | 2015-06-29 → 2015-06-26 (-3d) |  |  |  |  |
| 88 | Refine Database design |  | 2015-07-01 → 2015-06-30 (-1d) |  |  |  |  |
| 89 | Refine Database Design |  | 2015-07-02 → 2015-07-01 (-1d) |  |  |  |  |
| 90 | **Screen design** |  | 2015-06-16 → 2015-06-15 (-1d) |  |  |  |  |

| ID | Task | Start | Finish | Duration | Total float | Predecessors | Other |
| --- | --- | --- | --- | --- | --- | --- | --- |
| 91 | Create Screen Flow digram |  | 2015-06-12 → 2015-06-11 (-1d) |  |  |  |  |
| 92 | Create Screen Definition |  | 2015-06-15 → 2015-06-12 (-3d) |  |  |  |  |
| 93 | Create Screen Design |  | 2015-06-16 → 2015-06-15 (-1d) |  |  |  |  |
| 94 | **Class/Component Design** |  | 2015-07-08 → 2015-07-07 (-1d) |  |  |  |  |
| 95 | Create Data models |  | 2015-07-02 → 2015-07-01 (-1d) |  |  |  |  |
| 96 | List components of the system |  | 2015-07-03 → 2015-07-02 (-1d) |  |  |  |  |
| 97 | Break modules into classes |  | 2015-07-06 → 2015-07-03 (-3d) |  |  |  |  |
| 98 | Create Class diagram |  | 2015-07-08 → 2015-07-07 (-1d) |  |  |  |  |
| 99 | Create Class description document |  | 2015-07-07 → 2015-07-06 (-1d) |  |  |  |  |
| 100 | Create Flow diagram |  | 2015-07-06 → 2015-07-03 (-3d) |  |  |  |  |
| 101 | Create Progress Report 2 |  | 2015-07-07 → 2015-07-06 (-1d) |  |  |  |  |
| 102 | Create Design review checklists |  | 2015-07-08 → 2015-07-07 (-1d) |  |  |  |  |
| 103 | **Project Management** |  | 2015-06-12 → 2015-06-11 (-1d) |  |  |  |  |
| 104 | Update project plan |  | 2015-06-12 → 2015-06-11 (-1d) |  |  |  |  |
| 105 | Coding Center Helper Page |  | 2015-06-12 → 2015-06-11 (-1d) |  |  |  | was named Coding About/Contact Page |
| 106 | Coding Login with Facebook and Google+ feature |  | 2015-06-11 → 2015-06-10 (-1d) |  |  |  |  |
| 107 | **Test** |  | 2015-06-12 → 2015-06-11 (-1d) |  |  |  |  |
| 108 | Create Test plan |  | 2015-06-08 → 2015-06-05 (-3d) |  |  |  |  |
| 109 | Review + Update Test plan |  | 2015-06-09 → 2015-06-08 (-1d) |  |  |  |  |
| 110 | Test plan approved | 2015-06-09 → 2015-06-08 (-1d) | 2015-06-09 → 2015-06-08 (-1d) |  |  |  |  |
| 111 | Start writing Test cases |  | 2015-06-12 → 2015-06-11 (-1d) |  |  |  |  |
| 112 | **Construction** | 2015-07-08 → 2015-07-07 (-1d) | 2015-08-28 → 2015-08-17 (-11d) | 37d → 29d |  |  |  |
| 113 | **Design** |  | 2015-07-13 → 2015-07-10 (-3d) |  |  |  |  |
| 114 | Refine Design document |  | 2015-07-13 → 2015-07-10 (-3d) |  |  |  |  |
| 115 | **Coding** | 2015-07-13 → 2015-07-16 (+3d) | 2015-08-05 → 2015-08-13 (+8d) | 17d → 21d |  | 113 → 113FS+3d |  |
| 116 | Build prototype | 2015-07-13 → 2015-07-16 (+3d) | 2015-07-15 → 2015-07-17 (+2d) |  |  |  |  |
| 117 | Prototype approved | 2015-07-15 → 2015-07-17 (+2d) | 2015-07-15 → 2015-07-17 (+2d) |  |  |  |  |
| 118 | **Coding product (Continue)** | 2015-07-15 → 2015-07-20 (+5d) | 2015-08-03 → 2015-08-11 (+8d) | 13d → 17d |  |  |  |
| 119 | Develop UI | 2015-07-15 → 2015-07-20 (+5d) | 2015-07-22 → 2015-07-24 (+2d) |  |  |  |  |
| 120 | Develop objects | 2015-07-15 → 2015-07-20 (+5d) | 2015-07-17 → 2015-07-21 (+4d) |  |  |  |  |
| 121 | Create system documentation | 2015-07-15 → 2015-07-20 (+5d) |  | 3d → 1d | 12d → 18d |  |  |
| 122 | **Coding Modules** | 2015-07-20 → 2015-07-23 (+3d) | 2015-08-03 → 2015-08-11 (+8d) | 10d → 14d |  |  |  |
| 123 | **Part 1** | 2015-07-20 → 2015-07-23 (+3d) | 2015-07-27 → 2015-08-04 (+8d) | 5d → 9d |  |  |  |
| 124 | Homepage Module | 2015-07-20 → 2015-07-23 (+3d) | 2015-07-22 → 2015-07-27 (+5d) | 2d → 3d |  |  |  |
| 125 | User personal page Module | 2015-07-22 → 2015-07-23 (+1d) | 2015-07-23 → 2015-07-24 (+1d) | 1d → 2d | 0d → 6.5d | 124 → 124SS |  |
| 126 | Admin Module | 2015-07-20 → 2015-07-23 (+3d) | 2015-07-22 → 2015-07-24 (+2d) |  | 0d → 5d |  |  |
| 127 | Search Module | 2015-07-22 → 2015-07-28 (+6d) | 2015-07-23 → 2015-07-30 (+7d) | 1d → 3d |  | 126 → 124 |  |
| 128 | Login/Logout Module | 2015-07-22 → 2015-07-27 (+5d) | 2015-07-23 → 2015-07-27 (+4d) | 1d → 0.5d | 0d → 6.5d | 127SS → 125 |  |
| 129 | Friend Module | 2015-07-23 → 2015-07-27 (+4d) | 2015-07-27 → 2015-07-28 (+1d) |  | 0d → 5d | 125 → 126 |  |
| 130 | Room module | 2015-07-23 → 2015-07-31 (+8d) | 2015-07-27 → 2015-08-04 (+8d) | 2d → 3d |  | 128 → 127 |  |
| 131 | **Part 2** | 2015-07-28 → 2015-08-06 (+9d) | 2015-08-03 → 2015-08-11 (+8d) |  |  |  |  |
| 132 | Suggestion Module | 2015-07-28 → 2015-08-06 (+9d) | 2015-07-30 → 2015-08-07 (+8d) |  |  | none → 128 |  |
| 133 | Sharing Module | 2015-07-30 → 2015-08-06 (+7d) | 2015-07-31 → 2015-08-06 (+6d) | 1d → 0.5d | 0d → 0.5d | 132 → 129 |  |
| 134 | Report Module | 2015-07-31 → 2015-08-06 (+6d) | 2015-08-03 → 2015-08-06 (+3d) | 1d → 0.5d | 0d → 3.5d | 133 → 130 |  |
| 135 | Chat module | 2015-07-28 → 2015-08-10 (+13d) | 2015-07-30 → 2015-08-11 (+12d) |  |  | 132SS → 132 |  |
| 136 | Planning Module | 2015-07-30 → 2015-08-06 (+7d) | 2015-08-03 → 2015-08-11 (+8d) | 2d → 3d | 0d → 0.5d | 135 → 133 | was named Planing trip helper Module |
| 137 | Product development completes | 2015-08-05 → 2015-08-13 (+8d) | 2015-08-05 → 2015-08-13 (+8d) |  |  |  |  |
| 138 | **Testing** | 2015-07-08 → 2015-07-07 (-1d) | 2015-08-28 → 2015-08-17 (-11d) | 37d → 29d |  |  |  |
| 139 | **Writing Test cases (Continue)** |  | 2015-07-29 → 2015-07-23 (-6d) | 15d → 12d | 22d → 0d |  |  |
| 140 | Create Integration Test Case |  | 2015-07-15 → 2015-07-10 (-5d) | 1w → 3d | 22d → 0d |  |  |
| 141 | Update and review Integration Test Case | 2015-07-17 → 2015-07-15 (-2d) | 2015-07-22 → 2015-07-16 (-6d) | 3d → 2d | 22d → 0d |  |  |
| 142 | Create System Test Case | 2015-07-22 → 2015-07-17 (-5d) | 2015-07-27 → 2015-07-21 (-6d) |  | 22d → 0d |  |  |
| 143 | Update and review System Test Case | 2015-07-27 → 2015-07-22 (-5d) | 2015-07-29 → 2015-07-23 (-6d) |  | 22d → 0d |  |  |
| 144 | Writing Test cases completes | 2015-07-08 → 2015-07-07 (-1d) | 2015-07-08 → 2015-07-07 (-1d) |  | 37d → 29d |  |  |
| 145 | **Execute Test** | 2015-08-05 → 2015-07-24 (-12d) | 2015-08-28 → 2015-08-17 (-11d) |  |  | 115 → 139 |  |
| 146 | **Execute Test Part 1** | 2015-08-05 → 2015-07-24 (-12d) | 2015-08-17 → 2015-08-04 (-13d) |  |  |  |  |
| 147 | Execute Component Test | 2015-08-05 → 2015-07-24 (-12d) | 2015-08-07 → 2015-07-27 (-11d) |  |  |  |  |
| 148 | Fix bug Component Test | 2015-08-07 → 2015-07-28 (-10d) | 2015-08-11 → 2015-07-29 (-13d) |  |  |  |  |
| 149 | Execute Integration Test | 2015-08-07 → 2015-07-28 (-10d) | 2015-08-11 → 2015-07-29 (-13d) |  |  |  |  |
| 150 | Fix bug Integration Test | 2015-08-11 → 2015-07-30 (-12d) | 2015-08-13 → 2015-07-31 (-13d) |  |  |  |  |
| 151 | Execute System Test | 2015-08-11 → 2015-07-30 (-12d) | 2015-08-13 → 2015-07-31 (-13d) |  |  |  |  |
| 152 | Fix bug System Test | 2015-08-13 → 2015-08-03 (-10d) | 2015-08-17 → 2015-08-04 (-13d) |  |  |  |  |
| 153 | **Execute Test Part 2** | 2015-08-17 → 2015-08-05 (-12d) | 2015-08-27 → 2015-08-14 (-13d) |  |  |  |  |
| 154 | Execute Component Test | 2015-08-17 → 2015-08-05 (-12d) | 2015-08-19 → 2015-08-06 (-13d) |  |  |  |  |
| 155 | Fix bug Component Test | 2015-08-19 → 2015-08-07 (-12d) | 2015-08-21 → 2015-08-10 (-11d) |  |  |  |  |
| 156 | Execute Integration Test | 2015-08-19 → 2015-08-07 (-12d) | 2015-08-21 → 2015-08-10 (-11d) |  |  |  |  |
| 157 | Fix bug Integration Test | 2015-08-21 → 2015-08-11 (-10d) | 2015-08-25 → 2015-08-12 (-13d) |  |  |  |  |
| 158 | Execute System Test | 2015-08-21 → 2015-08-11 (-10d) | 2015-08-25 → 2015-08-12 (-13d) |  |  |  |  |
| 159 | Fix bug System Test | 2015-08-25 → 2015-08-13 (-12d) | 2015-08-27 → 2015-08-14 (-13d) |  |  |  |  |
| 160 | Create Test Report first verstion | 2015-08-27 → 2015-08-17 (-10d) | 2015-08-28 → 2015-08-17 (-11d) |  |  |  |  |

| ID | Task | Start | Finish | Total float | Other |
| --- | --- | --- | --- | --- | --- |
| 161 | Complete Testing | 2015-08-28 → 2015-08-17 (-11d) | 2015-08-28 → 2015-08-17 (-11d) |  |  |
| 162 | **User Manual** | 2015-08-05 → 2015-08-14 (+9d) | 2015-08-07 → 2015-08-17 (+10d) | 15d → 0d |  |
| 163 | Create Installation guideline | 2015-08-05 → 2015-08-14 (+9d) | 2015-08-06 → 2015-08-14 (+8d) | 15d → 0d |  |
| 164 | Create User guideline | 2015-08-05 → 2015-08-14 (+9d) | 2015-08-06 → 2015-08-14 (+8d) | 15d → 0d |  |
| 165 | Review + Update guidelines | 2015-08-06 → 2015-08-17 (+11d) | 2015-08-07 → 2015-08-17 (+10d) | 15d → 0d |  |
| 166 | **Manage development** | 2015-07-13 → 2015-07-16 (+3d) | 2015-07-20 → 2015-07-22 (+2d) | 29d → 18d |  |
| 167 | **Manage scope/cost/time** | 2015-07-13 → 2015-07-16 (+3d) | 2015-07-20 → 2015-07-22 (+2d) | 29d → 18d |  |
| 168 | Monitor product changes | 2015-07-13 → 2015-07-16 (+3d) | 2015-07-20 → 2015-07-22 (+2d) | 29d → 18d |  |
| 169 | Monitor project changes | 2015-07-13 → 2015-07-16 (+3d) | 2015-07-20 → 2015-07-22 (+2d) | 29d → 18d |  |
| 170 | **Manage communications** | 2015-07-13 → 2015-07-16 (+3d) | 2015-07-14 → 2015-07-16 (+2d) | 33d → 22d |  |
| 171 | **Implement communications methods and strategies** | 2015-07-13 → 2015-07-16 (+3d) | 2015-07-14 → 2015-07-16 (+2d) | 33d → 22d |  |
| 172 | Select tools | 2015-07-13 → 2015-07-16 (+3d) | 2015-07-14 → 2015-07-16 (+2d) | 33d → 22d |  |
| 173 | **Distribute information** | 2015-07-13 → 2015-07-16 (+3d) | 2015-07-14 → 2015-07-16 (+2d) | 33d → 22d |  |
| 174 | Attend team meeting | 2015-07-13 → 2015-07-16 (+3d) | 2015-07-14 → 2015-07-16 (+2d) | 33d → 22d |  |
| 175 | Create status reports | 2015-07-13 → 2015-07-16 (+3d) | 2015-07-14 → 2015-07-16 (+2d) | 33d → 22d |  |
| 176 | Create Weekly Report | 2015-07-13 → 2015-07-16 (+3d) | 2015-07-14 → 2015-07-16 (+2d) | 33d → 22d |  |
| 177 | Resolve communications problems | 2015-07-13 → 2015-07-16 (+3d) | 2015-07-14 → 2015-07-16 (+2d) | 33d → 22d |  |
| 178 | **Manage quality control** | 2015-07-13 → 2015-07-16 (+3d) | 2015-07-14 → 2015-07-16 (+2d) | 33d → 22d |  |
| 179 | Monitor product quality | 2015-07-13 → 2015-07-16 (+3d) | 2015-07-14 → 2015-07-16 (+2d) | 33d → 22d |  |
| 180 | **Monitor project quality** | 2015-07-13 → 2015-07-16 (+3d) | 2015-07-14 → 2015-07-16 (+2d) | 33d → 22d |  |
| 181 | Implement process improvements | 2015-07-13 → 2015-07-16 (+3d) | 2015-07-14 → 2015-07-16 (+2d) | 33d → 22d |  |
| 182 | **Manage risk** | 2015-07-13 → 2015-07-16 (+3d) | 2015-07-14 → 2015-07-16 (+2d) | 33d → 22d |  |
| 183 | Monitor risks | 2015-07-13 → 2015-07-16 (+3d) | 2015-07-14 → 2015-07-16 (+2d) | 33d → 22d |  |
| 184 | Specify responses | 2015-07-13 → 2015-07-16 (+3d) | 2015-07-14 → 2015-07-16 (+2d) | 33d → 22d |  |
| 185 | Manage integration | 2015-07-13 → 2015-07-16 (+3d) | 2015-07-14 → 2015-07-16 (+2d) | 33d → 22d |  |
| 186 | **Termination** | 2015-08-28 → 2015-08-18 (-10d) | 2015-09-08 → 2015-08-26 (-13d) |  |  |
| 187 | **Pre-Closing** | 2015-08-28 → 2015-08-18 (-10d) | 2015-09-01 → 2015-08-19 (-13d) |  |  |
| 188 | Training presentation | 2015-08-28 → 2015-08-18 (-10d) | 2015-09-01 → 2015-08-19 (-13d) |  |  |
| 189 | **Closing** | 2015-09-02 → 2015-08-21 (-12d) | 2015-09-08 → 2015-08-26 (-13d) |  |  |
| 190 | Prepare for presentation | 2015-09-02 → 2015-08-21 (-12d) | 2015-09-07 → 2015-08-25 (-13d) |  |  |
| 191 | Represent Capstone Project and Completed | 2015-09-07 → 2015-08-26 (-12d) | 2015-09-08 → 2015-08-26 (-13d) |  | constraint none → finish no earlier than 2015-08-26 |

## Version 9 (saved 2015-08-27)

Note of the change: Merge branch 'master' of https://github.com/sangnvus/2015SUMJS01

Last finish stays 2015-08-26.

Changed:

| ID | Task | Other |
| --- | --- | --- |
| 86 | Define object in Database | was named Define tables' relationships |
| 87 | Define relationships in Database | was named Apply normalization rules to Database design |
