# TT_ProjectSchedule

How a schedule from MS Project changed from version to version. A marks actual dates.

## Version 1 (saved 2015-05-23)

Note of the change: Update Plan/FAP_ProjectSchedule_v1.2_EN.mpp

| ID | WBS | Task | Duration | Start | Finish | Predecessors | Total float |
| --- | --- | --- | --- | --- | --- | --- | --- |
| 1 | 1 | **Fly Away Plus** | 70d? | 2015-05-13 | 2015-08-18 |  | 0d |
| 2 | 1.1 | **Initiation** | 14d | 2015-05-13 | 2015-06-01 |  | 44d |
| 3 |  | Form up team roles | 0.5d | 2015-05-13 | 2015-05-13 |  | 57.5d |
| 4 |  | Uniform idea meeting | 0.5d | 2015-05-13 | 2015-05-13 |  | 44d |
| 5 | 1.1.3 | **Project Clarification** | 0.5d | 2015-05-13 | 2015-05-13 |  | 44d |
| 6 |  | Clarify project scope | 0.1d | 2015-05-13 | 2015-05-13 | 4 | 44d |
| 7 |  | Clarify technical requirements | 0.1d | 2015-05-13 | 2015-05-13 | 6 | 44d |
| 8 |  | Clarify rules in Team | 0.1d | 2015-05-13 | 2015-05-13 | 7 | 44d |
| 9 |  | Clarify working environments | 0.1d | 2015-05-13 | 2015-05-13 | 8 | 44d |
| 10 |  | Develop communications plan | 0.1d | 2015-05-13 | 2015-05-13 | 9 | 44d |
| 11 |  | List project features | 1d | 2015-05-13 | 2015-05-13 |  | 57d |
| 12 |  | Initiate Project structure | 1d | 2015-05-13 | 2015-05-13 |  | 57d |
| 13 |  | Create Coding conventions | 0.5d | 2015-05-13 | 2015-05-13 |  | 57.5d |
| 14 | 1.1.7 | **Environment** | 1d | 2015-05-14 | 2015-05-14 | 5 | 44d |
| 15 |  | Create guideline of installing and using environments | 0.5d | 2015-05-14 | 2015-05-14 |  | 44d |
| 16 |  | Setup TortoiseGit | 0.5d | 2015-05-14 | 2015-05-14 | 15 | 44d |
| 17 |  | Setup Visual Studio 2013 Ultimate | 0.5d | 2015-05-14 | 2015-05-14 |  | 44.5d |
| 18 |  | Setup Microsoft SQL Server 2012 | 0.5d | 2015-05-14 | 2015-05-14 |  | 44.5d |
| 19 |  | Training environments meeting | 0.5d | 2015-05-14 | 2015-05-14 |  | 44.5d |
| 20 | 1.1.8 | **Technology research** | 12d | 2015-05-15 | 2015-06-01 | 14 | 44d |
| 21 |  | Research technologies to be used in project | 3d | 2015-05-15 | 2015-05-19 |  | 53d |
| 22 |  | Study .NET MVC5 | 1w | 2015-05-15 | 2015-05-21 |  | 44d |
| 23 |  | Study Bootstrap | 2d | 2015-05-22 | 2015-05-25 | 22 | 44d |
| 24 |  | Study Javascript, jQuery | 1w | 2015-05-26 | 2015-06-01 | 23 | 44d |
| 25 | 1.1.9 | **Project Introduction** | 4d | 2015-05-15 | 2015-05-20 |  | 51.5d |
| 26 |  | Create "Project Introduction" document | 2d | 2015-05-15 | 2015-05-18 | 14 | 51.5d |
| 27 |  | Peer review "Project Introduction" document | 0.5d | 2015-05-19 | 2015-05-19 | 26 | 51.5d |
| 28 |  | Update "Project Introduction" document draft | 1d | 2015-05-19 | 2015-05-20 | 27 | 51.5d |
| 29 |  | Update "Project Introduction" based on instructor's comments | 0.5d | 2015-05-20 | 2015-05-20 | 28 | 51.5d |
| 30 |  | Summit Project Introduction | 0d | 2015-05-20 | 2015-05-20 | 29 | 51.5d |
| 31 |  | Kick-off meeting | 0.5d | 2015-05-21 | 2015-05-21 | 25 | 51.5d |
| 32 | 1.1.11 | **Q&A sheet** | 0.5d | 2015-05-21 | 2015-05-21 | 25 | 51.5d |
| 33 |  | Create Q&A | 0.5d | 2015-05-21 | 2015-05-21 |  | 51.5d |
| 34 |  | Update Q&A sheet | 0.5d | 2015-05-21 | 2015-05-21 |  | 51.5d |
| 35 |  | Translate Q&A sheet | 0.5d | 2015-05-21 | 2015-05-21 |  | 51.5d |
| 36 | 1.1.12 | **Project Plan** | 11.5d | 2015-05-13 | 2015-05-28 |  | 46.5d |
| 37 |  | Develop project definition | 2d | 2015-05-13 | 2015-05-14 |  | 46.5d |
| 38 |  | Work BreakDown Structure | 3d | 2015-05-15 | 2015-05-19 | 37 | 46.5d |
| 39 |  | Create project schedule document | 3d | 2015-05-20 | 2015-05-22 | 38 | 46.5d |
| 40 |  | Create project plan document | 1d | 2015-05-25 | 2015-05-25 | 39 | 46.5d |
| 41 |  | Create CM Plan document | 0.5d | 2015-05-26 | 2015-05-26 | 40 | 46.5d |
| 42 |  | Review & get comment of Project Plan | 0.5d | 2015-05-26 | 2015-05-26 | 41 | 46.5d |
| 43 |  | Develop Risk Register | 0.5d | 2015-05-27 | 2015-05-27 | 42 | 47.5d |
| 44 |  | Update Project Plan documents (Schedule, Project Plan in MS Word, CM Plan) | 1d | 2015-05-27 | 2015-05-27 | 42 | 46.5d |
| 45 |  | Create PP Review check list | 0.5d | 2015-05-28 | 2015-05-28 | 44 | 46.5d |
| 46 |  | Summit Project Plan Final version | 0d | 2015-05-28 | 2015-05-28 | 45 | 46.5d |
| 47 | 1.1.13 | **Requirement** | 4d | 2015-05-13 | 2015-05-18 |  | 54d |
| 48 | 1.1.13.1 | **User Requirement** | 2d | 2015-05-13 | 2015-05-14 |  | 54d |
| 49 |  | Develop brief "User Requirements Specification" document | 1d | 2015-05-13 | 2015-05-13 |  | 54d |
| 50 |  | Peer review brief "User Requirements Specification" document | 0.5d | 2015-05-14 | 2015-05-14 | 49 | 54d |
| 51 |  | Update brief "User Requirements Specification" document | 0.5d | 2015-05-14 | 2015-05-14 | 50 | 54d |
| 52 | 1.1.13.2 | **Mock-up screens** | 2d | 2015-05-15 | 2015-05-18 | 48 | 54d |
| 53 |  | Create mock-up screens | 2d | 2015-05-15 | 2015-05-18 |  | 54d |
| 54 |  | Collect business requirements and processes | 0.5d | 2015-05-13 | 2015-05-13 |  | 57.5d |
| 55 |  | Develop main features' mockup screens | 1d | 2015-05-13 | 2015-05-13 |  | 57d |
| 56 |  | Review and edit screen main features' mockup screens | 0.5d | 2015-05-13 | 2015-05-13 |  | 57.5d |
| 57 |  | Complete main features' mockup screens | 0d | 2015-05-13 | 2015-05-13 |  | 58d |
| 58 | 1.2 | **Solution** | 1d? | 2015-06-01 | 2015-06-02 | 2 | 44d |
| 59 | 1.2.1 | **Sofware Requirement Specification** | 1d? | 2015-06-02 | 2015-06-02 |  | 44d |
| 60 |  | Complete mock-up screens | 1d? | 2015-06-02 | 2015-06-02 |  | 44d |
| 61 | 1.2.1.2 | **Functional Requirement Specification** | 1d? | 2015-06-02 | 2015-06-02 |  | 44d |
| 62 | 1.2.1.2.1 | **Part 1** | 1d? | 2015-06-02 | 2015-06-02 |  | 44d |
| 63 |  | Homepage Module | 1d? | 2015-06-02 | 2015-06-02 |  | 44d |
| 64 |  | User personal page Module | 1d? | 2015-06-02 | 2015-06-02 |  | 44d |
| 65 |  | Admin Module | 1d? | 2015-06-02 | 2015-06-02 |  | 44d |
| 66 |  | Search Module | 1d? | 2015-06-02 | 2015-06-02 |  | 44d |
| 67 |  | Login/Logout Module | 1d? | 2015-06-02 | 2015-06-02 |  | 44d |
| 68 |  | Friend Module | 1d? | 2015-06-02 | 2015-06-02 |  | 44d |
| 69 |  | Room module | 1d? | 2015-06-02 | 2015-06-02 |  | 44d |
| 70 | 1.2.1.2.2 | **Part 2** | 1d? | 2015-06-02 | 2015-06-02 |  | 44d |

| ID | WBS | Task | Duration | Start | Finish | Predecessors | Total float |
| --- | --- | --- | --- | --- | --- | --- | --- |
| 71 |  | Suggestion Module | 1d? | 2015-06-02 | 2015-06-02 |  | 44d |
| 72 |  | Sharing Module | 1d? | 2015-06-02 | 2015-06-02 |  | 44d |
| 73 |  | Report Module | 1d? | 2015-06-02 | 2015-06-02 |  | 44d |
| 74 |  | Planing trip helper Module | 1d? | 2015-06-02 | 2015-06-02 |  | 44d |
| 75 |  | Chat module | 1d? | 2015-06-02 | 2015-06-02 |  | 44d |
| 76 | 1.2.1.3 | **Non-functional Requirements Specification** | 1d? | 2015-06-02 | 2015-06-02 |  | 44d |
| 77 |  | Develop User Interface requirements | 1d? | 2015-06-02 | 2015-06-02 |  | 44d |
| 78 |  | Develop Performance requirements | 1d? | 2015-06-02 | 2015-06-02 |  | 44d |
| 79 | 1.2.2 | **System Architectural Design** | 1d? | 2015-06-02 | 2015-06-02 |  | 44d |
| 80 |  | Define the system structure and unify system features | 1d? | 2015-06-02 | 2015-06-02 |  | 44d |
| 81 |  | Study the common System Architetures | 1d? | 2015-06-02 | 2015-06-02 |  | 44d |
| 82 |  | Make choice of System Architeture | 1d? | 2015-06-02 | 2015-06-02 |  | 44d |
| 83 |  | Complete Architecture Design version 1.0 | 1d? | 2015-06-02 | 2015-06-02 |  | 44d |
| 84 | 1.2.3 | **Detailed Design** | 1d? | 2015-06-02 | 2015-06-02 |  | 44d |
| 85 |  | Database design | 1d? | 2015-06-02 | 2015-06-02 |  | 44d |
| 86 | 1.2.3.2 | **Screen design** | 1d? | 2015-06-02 | 2015-06-02 |  | 44d |
| 87 |  | Create Screen Flow digram | 1d? | 2015-06-02 | 2015-06-02 |  | 44d |
| 88 |  | Create Screen Definition | 1d? | 2015-06-02 | 2015-06-02 |  | 44d |
| 89 |  | Create Screen Design | 1d? | 2015-06-02 | 2015-06-02 |  | 44d |
| 90 | 1.2.3.3 | **Class/Component Design** | 1d? | 2015-06-02 | 2015-06-02 |  | 44d |
| 91 |  | Create Data models | 1d? | 2015-06-02 | 2015-06-02 |  | 44d |
| 92 |  | List components of the system | 1d? | 2015-06-02 | 2015-06-02 |  | 44d |
| 93 |  | Break modules into classes | 1d? | 2015-06-02 | 2015-06-02 |  | 44d |
| 94 |  | Create Class diagram | 1d? | 2015-06-02 | 2015-06-02 |  | 44d |
| 95 |  | Create Class description document | 1d? | 2015-06-02 | 2015-06-02 |  | 44d |
| 96 |  | Create Flow diagram | 1d? | 2015-06-02 | 2015-06-02 |  | 44d |
| 97 |  | Create Progress Report 2 | 1d? | 2015-06-02 | 2015-06-02 |  | 44d |
| 98 |  | Create Design review checklists | 1d? | 2015-06-02 | 2015-06-02 |  | 44d |
| 99 | 1.2.4 | **System Database Design** | 1d? | 2015-06-02 | 2015-06-02 |  | 44d |
| 100 |  | Organize information to Database tables | 1d? | 2015-06-02 | 2015-06-02 |  | 44d |
| 101 |  | Define tables' relationships | 1d? | 2015-06-02 | 2015-06-02 |  | 44d |
| 102 |  | Apply normalization rules to Database design | 1d? | 2015-06-02 | 2015-06-02 |  | 44d |
| 103 |  | Refine Database design | 1d? | 2015-06-02 | 2015-06-02 |  | 44d |
| 104 | 1.2.5 | **Project Management** | 1d? | 2015-06-02 | 2015-06-02 |  | 44d |
| 105 |  | Update project plan | 1d? | 2015-06-02 | 2015-06-02 |  | 44d |
| 106 |  | Create Progress Report 3 | 1d? | 2015-06-02 | 2015-06-02 |  | 44d |
| 107 |  | Coding About/Contact Page | 1d? | 2015-06-02 | 2015-06-02 |  | 44d |
| 108 |  | Coding Login with Facebook and Google+ feature | 1d? | 2015-06-02 | 2015-06-02 |  | 44d |
| 109 | 1.2.6 | **Test** | 1d? | 2015-06-01 | 2015-06-02 |  | 44d |
| 110 |  | Create Test plan | 1d? | 2015-06-02 | 2015-06-02 |  | 44d |
| 111 |  | Review + Update Test plan | 1d? | 2015-06-02 | 2015-06-02 |  | 44d |
| 112 |  | Test plan approved | 0d | 2015-06-01 | 2015-06-01 |  | 45d |
| 113 |  | Start writing Test cases | 1d? | 2015-06-02 | 2015-06-02 |  | 44d |
| 114 | 1.3 | **Construction** | 6w | 2015-06-23 | 2015-08-04 | 58 |  |
| 115 | 1.3.1 | **Design** | 1d | 2015-06-24 | 2015-06-24 |  | 29d |
| 116 |  | Refine Design document | 1d | 2015-06-24 | 2015-06-24 |  | 29d |
| 117 | 1.3.2 | **Coding** | 1d? | 2015-06-23 | 2015-06-24 |  | 29d |
| 118 |  | Build prototype | 1d | 2015-06-24 | 2015-06-24 |  | 29d |
| 119 |  | Prototype approved | 0d | 2015-06-23 | 2015-06-23 |  | 30d |
| 120 | 1.3.2.3 | **Coding product (Continue)** | 1d? | 2015-06-24 | 2015-06-24 |  | 29d |
| 121 |  | Develop UI | 1d | 2015-06-24 | 2015-06-24 |  | 29d |
| 122 |  | Develop objects | 1d | 2015-06-24 | 2015-06-24 |  | 29d |
| 123 |  | Create system documentation | 1d | 2015-06-24 | 2015-06-24 |  | 29d |
| 124 | 1.3.2.3.4 | **Coding Modules** | 1d? | 2015-06-24 | 2015-06-24 |  | 29d |
| 125 | 1.3.2.3.4.1 | **Part 1** | 1d? | 2015-06-24 | 2015-06-24 |  | 29d |
| 126 |  | Homepage Module | 1d? | 2015-06-24 | 2015-06-24 |  | 29d |
| 127 |  | User personal page Module | 1d? | 2015-06-24 | 2015-06-24 |  | 29d |
| 128 |  | Admin Module | 1d? | 2015-06-24 | 2015-06-24 |  | 29d |
| 129 |  | Search Module | 1d? | 2015-06-24 | 2015-06-24 |  | 29d |
| 130 |  | Login/Logout Module | 1d? | 2015-06-24 | 2015-06-24 |  | 29d |
| 131 |  | Friend Module | 1d? | 2015-06-24 | 2015-06-24 |  | 29d |
| 132 |  | Room module | 1d? | 2015-06-24 | 2015-06-24 |  | 29d |
| 133 | 1.3.2.3.4.2 | **Part 2** | 1d? | 2015-06-24 | 2015-06-24 |  | 29d |
| 134 |  | Suggestion Module | 1d? | 2015-06-24 | 2015-06-24 |  | 29d |
| 135 |  | Sharing Module | 1d? | 2015-06-24 | 2015-06-24 |  | 29d |
| 136 |  | Report Module | 1d? | 2015-06-24 | 2015-06-24 |  | 29d |
| 137 |  | Planing trip helper Module | 1d? | 2015-06-24 | 2015-06-24 |  | 29d |
| 138 |  | Chat module | 1d? | 2015-06-24 | 2015-06-24 |  | 29d |
| 139 |  | Product development completes | 0d | 2015-06-23 | 2015-06-23 |  | 30d |
| 140 | 1.3.3 | **Testing** | 1d? | 2015-06-23 | 2015-06-24 |  | 29d |

| ID | WBS | Task | Duration | Start | Finish | Predecessors | Total float |
| --- | --- | --- | --- | --- | --- | --- | --- |
| 141 | 1.3.3.1 | **Writing Test cases (Continue)** | 1d? | 2015-06-24 | 2015-06-24 |  | 29d |
| 142 |  | Create Integration Test Case | 1d? | 2015-06-24 | 2015-06-24 |  | 29d |
| 143 |  | Update and review Integration Test Case | 1d? | 2015-06-24 | 2015-06-24 |  | 29d |
| 144 |  | Create System Test Case | 1d? | 2015-06-24 | 2015-06-24 |  | 29d |
| 145 |  | Update and review System Test Case | 1d? | 2015-06-24 | 2015-06-24 |  | 29d |
| 146 |  | Writing Test cases completes | 0d | 2015-06-23 | 2015-06-23 |  | 30d |
| 147 | 1.3.3.3 | **Execute Test** | 1d? | 2015-06-23 | 2015-06-24 |  | 29d |
| 148 | 1.3.3.3.1 | **Execute Test Part 1** | 1d? | 2015-06-24 | 2015-06-24 |  | 29d |
| 149 |  | Execute Component Test | 1d? | 2015-06-24 | 2015-06-24 |  | 29d |
| 150 |  | Fix bug Component Test | 1d? | 2015-06-24 | 2015-06-24 |  | 29d |
| 151 |  | Execute Integration Test | 1d? | 2015-06-24 | 2015-06-24 |  | 29d |
| 152 |  | Fix bug Integration Test | 1d? | 2015-06-24 | 2015-06-24 |  | 29d |
| 153 |  | Execute System Test | 1d? | 2015-06-24 | 2015-06-24 |  | 29d |
| 154 |  | Fix bug System Test | 1d? | 2015-06-24 | 2015-06-24 |  | 29d |
| 155 | 1.3.3.3.2 | **Execute Test Part 2** | 1d? | 2015-06-24 | 2015-06-24 |  | 29d |
| 156 |  | Execute Component Test | 1d? | 2015-06-24 | 2015-06-24 |  | 29d |
| 157 |  | Fix bug Component Test | 1d? | 2015-06-24 | 2015-06-24 |  | 29d |
| 158 |  | Execute Integration Test | 1d? | 2015-06-24 | 2015-06-24 |  | 29d |
| 159 |  | Fix bug Integration Test | 1d? | 2015-06-24 | 2015-06-24 |  | 29d |
| 160 |  | Execute System Test | 1d? | 2015-06-24 | 2015-06-24 |  | 29d |
| 161 |  | Fix bug System Test | 1d? | 2015-06-24 | 2015-06-24 |  | 29d |
| 162 |  | Create Test Report first verstion | 1d? | 2015-06-24 | 2015-06-24 |  | 29d |
| 163 |  | Complete Testing | 0d | 2015-06-23 | 2015-06-23 |  | 30d |
| 164 | 1.3.4 | **User Manual** | 1d? | 2015-06-24 | 2015-06-24 |  | 29d |
| 165 |  | Create Installation guideline | 1d? | 2015-06-24 | 2015-06-24 |  | 29d |
| 166 |  | Create User guideline | 1d? | 2015-06-24 | 2015-06-24 |  | 29d |
| 167 |  | Review + Update guidelines | 1d? | 2015-06-24 | 2015-06-24 |  | 29d |
| 168 | 1.3.5 | **Manage development** | 1d? | 2015-06-24 | 2015-06-24 |  | 29d |
| 169 | 1.3.5.1 | **Manage scope/cost/time** | 1d? | 2015-06-24 | 2015-06-24 |  | 29d |
| 170 |  | Monitor product changes | 1d? | 2015-06-24 | 2015-06-24 |  | 29d |
| 171 |  | Monitor project changes | 1d? | 2015-06-24 | 2015-06-24 |  | 29d |
| 172 | 1.3.5.2 | **Manage communications** | 1d? | 2015-06-24 | 2015-06-24 |  | 29d |
| 173 | 1.3.5.2.1 | **Implement communications methods and strategies** | 1d? | 2015-06-24 | 2015-06-24 |  | 29d |
| 174 |  | Select tools | 1d? | 2015-06-24 | 2015-06-24 |  | 29d |
| 175 | 1.3.5.2.2 | **Distribute information** | 1d? | 2015-06-24 | 2015-06-24 |  | 29d |
| 176 |  | Attend team meeting | 1d | 2015-06-24 | 2015-06-24 |  | 29d |
| 177 |  | Create status reports | 1d | 2015-06-24 | 2015-06-24 |  | 29d |
| 178 |  | Create Weekly Report | 1d? | 2015-06-24 | 2015-06-24 |  | 29d |
| 179 |  | Resolve communications problems | 1d | 2015-06-24 | 2015-06-24 |  | 29d |
| 180 | 1.3.5.3 | **Manage quality control** | 1d | 2015-06-24 | 2015-06-24 |  | 29d |
| 181 |  | Monitor product quality | 1d | 2015-06-24 | 2015-06-24 |  | 29d |
| 182 | 1.3.5.3.2 | **Monitor project quality** | 1d | 2015-06-24 | 2015-06-24 |  | 29d |
| 183 |  | Implement process improvements | 1d | 2015-06-24 | 2015-06-24 |  | 29d |
| 184 | 1.3.5.4 | **Manage risk** | 1d | 2015-06-24 | 2015-06-24 |  | 29d |
| 185 |  | Monitor risks | 1d | 2015-06-24 | 2015-06-24 |  | 29d |
| 186 |  | Specify responses | 1d | 2015-06-24 | 2015-06-24 |  | 29d |
| 187 |  | Manage integration | 1d | 2015-06-24 | 2015-06-24 |  | 29d |
| 188 | 1.4 | **Termination** | 2w | 2015-08-05 | 2015-08-18 | 114 |  |
| 189 | 1.4.1 | **Pre-Closing** | 1d | 2015-08-05 | 2015-08-05 |  | 9d |
| 190 |  | Training presentation | 1d | 2015-08-05 | 2015-08-05 |  | 9d |
| 191 | 1.4.2 | **Closing** | 1d | 2015-08-05 | 2015-08-05 |  | 9d |
| 192 |  | Prepare for presentation | 1d | 2015-08-05 | 2015-08-05 |  | 9d |
| 193 |  | Represent Capstone Project and Completed | 1d | 2015-08-05 | 2015-08-05 |  | 9d |

## Version 2 (saved 2015-09-03)

Note of the change: fix name homepage

Last finish 2015-08-18 → 2015-08-26 (+8d). Complete tasks 0 → 141.

Added:

| ID | Task | Duration | Start | Finish | Predecessors | Resources |
| --- | --- | --- | --- | --- | --- | --- |
| 3 | **Form up** | 1d | 2015-05-13 A | 2015-05-13 A |  |  |
| 88 | Refine Database Design | 1d | 2015-07-01 A | 2015-07-01 A | 84 | DevTeam |

Removed: 53 Create mock-up screens; 60 Complete mock-up screens; 99 System Database Design; 103 Refine Database design; 106 Create Progress Report 3

Changed:

| ID | Task | Start | Finish | Duration | Complete | Total float | Predecessors | Other |
| --- | --- | --- | --- | --- | --- | --- | --- | --- |
| 1 | **Fly Away Plus** | 2015-05-13 A | 2015-08-18 → 2015-08-26 A (+8d) | 70d? → 76d | 0% → 100% | 0d → none |  |  |
| 2 | **Initiation** | 2015-05-13 A | 2015-06-01 → 2015-06-02 A (+1d) | 14d → 15d | 0% → 100% | 44d → none |  |  |
| 4 | Form up team roles | 2015-05-13 A | 2015-05-13 A |  | 0% → 100% | 57.5d → none |  | resources none → TEAM |
| 5 | Uniform idea meeting | 2015-05-13 A | 2015-05-13 A |  | 0% → 100% | 44d → none | none → 4 | resources none → TEAM |
| 6 | **Project Clarification** | 2015-05-13 A | 2015-05-13 → 2015-05-14 A (+1d) | 0.5d → 1.5d | 0% → 100% | 44d → none |  |  |
| 7 | Clarify project scope | 2015-05-13 → 2015-05-14 A (+1d) | 2015-05-13 → 2015-05-14 A (+1d) |  | 0% → 100% | 44d → none |  | resources none → TEAM |
| 8 | Clarify technical requirements | 2015-05-13 → 2015-05-14 A (+1d) | 2015-05-13 → 2015-05-14 A (+1d) |  | 0% → 100% | 44d → none |  | resources none → TEAM |
| 9 | Clarify rules in Team | 2015-05-13 → 2015-05-14 A (+1d) | 2015-05-13 → 2015-05-14 A (+1d) |  | 0% → 100% | 44d → none |  | resources none → TEAM |
| 10 | Clarify working environments | 2015-05-13 → 2015-05-14 A (+1d) | 2015-05-13 → 2015-05-14 A (+1d) |  | 0% → 100% | 44d → none |  | resources none → TEAM |
| 11 | Develop communications plan | 2015-05-13 → 2015-05-14 A (+1d) | 2015-05-13 → 2015-05-14 A (+1d) |  | 0% → 100% | 44d → none |  | resources none → DucHN |
| 12 | List project features | 2015-05-13 A | 2015-05-13 A | 1d → 0.5d | 0% → 100% | 57d → none |  | resources none → TEAM |
| 13 | Initiate Project structure | 2015-05-13 A | 2015-05-13 A | 1d → 0.5d | 0% → 100% | 57d → none | none → 12 | resources none → HaiDT |
| 14 | Create Coding conventions | 2015-05-13 → 2015-05-14 A (+1d) | 2015-05-13 → 2015-05-14 A (+1d) |  | 0% → 100% | 57.5d → none | none → 13 | resources none → HaiDT |
| 15 | **Environment** | 2015-05-14 A | 2015-05-14 → 2015-05-15 A (+1d) | 1d → 1.5d | 0% → 100% | 44d → none |  |  |
| 16 | Create guideline of installing and using environments | 2015-05-14 A | 2015-05-14 A |  | 0% → 100% | 44d → none | none → 12 | resources none → DucHN |
| 17 | Setup TortoiseGit | 2015-05-14 → 2015-05-15 A (+1d) | 2015-05-14 → 2015-05-15 A (+1d) | 0.5d → 1h | 0% → 100% | 44d → none |  | resources none → TEAM |
| 18 | Setup Visual Studio 2013 Ultimate | 2015-05-14 → 2015-05-15 A (+1d) | 2015-05-14 → 2015-05-15 A (+1d) | 0.5d → 3h | 0% → 100% | 44.5d → none | none → 17 | resources none → TEAM |
| 19 | Setup Microsoft SQL Server 2012 | 2015-05-14 → 2015-05-15 A (+1d) | 2015-05-14 → 2015-05-15 A (+1d) | 0.5d → 1h | 0% → 100% | 44.5d → none | none → 18 | resources none → TEAM |
| 20 | Training environments meeting | 2015-05-14 → 2015-05-15 A (+1d) | 2015-05-14 → 2015-05-15 A (+1d) | 0.5d → 3h | 0% → 100% | 44.5d → none | none → 19 | resources none → TEAM |
| 21 | **Technology research** | 2015-05-15 → 2015-05-18 A (+3d) | 2015-06-01 → 2015-05-28 A (-4d) | 12d → 9d | 0% → 100% | 44d → none |  |  |
| 22 | Research technologies to be used in project | 2015-05-15 → 2015-05-18 A (+3d) | 2015-05-19 → 2015-05-20 A (+1d) |  | 0% → 100% | 53d → none |  | resources none → HaiDT |
| 23 | Study .NET MVC5 | 2015-05-15 → 2015-05-18 A (+3d) | 2015-05-21 A | 1w → 4d | 0% → 100% | 44d → none |  | resources none → HoangNM |
| 24 | Study Bootstrap | 2015-05-22 A | 2015-05-25 → 2015-05-22 A (-3d) | 2d → 1d | 0% → 100% | 44d → none |  | resources none → HoangNM |
| 25 | Study Javascript, jQuery | 2015-05-26 → 2015-05-25 A (-1d) | 2015-06-01 → 2015-05-28 A (-4d) | 1w → 4d | 0% → 100% | 44d → none |  | resources none → HoangNM |
| 26 | **Project Introduction** | 2015-05-15 → 2015-05-18 A (+3d) | 2015-05-20 → 2015-05-25 A (+5d) | 4d → 5.5d | 0% → 100% | 51.5d → none | none → 15 |  |
| 27 | Create "Project Introduction" document | 2015-05-15 → 2015-05-18 A (+3d) | 2015-05-18 → 2015-05-20 A (+2d) | 2d → 3d | 0% → 100% | 51.5d → none | 15 → none | resources none → DocTeam |
| 28 | Peer review "Project Introduction" document | 2015-05-19 → 2015-05-21 A (+2d) | 2015-05-19 → 2015-05-21 A (+2d) |  | 0% → 100% | 51.5d → none |  | resources none → DucHN |
| 29 | Update "Project Introduction" document draft | 2015-05-19 → 2015-05-21 A (+2d) | 2015-05-20 → 2015-05-22 A (+2d) |  | 0% → 100% | 51.5d → none |  | resources none → DocTeam |
| 30 | Update "Project Introduction" based on instructor's comments | 2015-05-20 → 2015-05-22 A (+2d) | 2015-05-20 → 2015-05-25 A (+5d) | 0.5d → 1d | 0% → 100% | 51.5d → none |  | resources none → DocTeam |
| 31 | Summit Project Introduction | 2015-05-20 → 2015-05-25 A (+5d) | 2015-05-20 → 2015-05-25 A (+5d) |  | 0% → 100% | 51.5d → none |  |  |
| 32 | Kick-off meeting | 2015-05-21 → 2015-05-25 A (+4d) | 2015-05-21 → 2015-05-25 A (+4d) |  | 0% → 100% | 51.5d → none |  | resources none → TEAM |
| 33 | **Q&A sheet** | 2015-05-21 → 2015-05-25 A (+4d) | 2015-05-21 → 2015-05-26 A (+5d) | 0.5d → 1.5d | 0% → 100% | 51.5d → none |  |  |
| 34 | Create Q&A | 2015-05-21 → 2015-05-25 A (+4d) | 2015-05-21 → 2015-05-25 A (+4d) |  | 0% → 100% | 51.5d → none |  | resources none → LucPT |
| 35 | Update Q&A sheet | 2015-05-21 → 2015-05-26 A (+5d) | 2015-05-21 → 2015-05-26 A (+5d) |  | 0% → 100% | 51.5d → none | none → 34 | resources none → LucPT |
| 36 | Translate Q&A sheet | 2015-05-21 → 2015-05-26 A (+5d) | 2015-05-21 → 2015-05-26 A (+5d) |  | 0% → 100% | 51.5d → none | none → 35 | resources none → LucPT |
| 37 | **Project Plan** | 2015-05-13 → 2015-05-18 A (+5d) | 2015-05-28 → 2015-06-02 A (+5d) | 11.5d → 12d | 0% → 100% | 46.5d → none | none → 15 |  |
| 38 | Develop project definition | 2015-05-13 → 2015-05-18 A (+5d) | 2015-05-14 → 2015-05-19 A (+5d) |  | 0% → 100% | 46.5d → none |  | resources none → DucHN |
| 39 | Create Project plan document | 2015-05-25 → 2015-05-20 A (-5d) | 2015-05-25 → 2015-05-20 A (-5d) |  | 0% → 100% | 46.5d → none | 41 → 38 | was named Create project plan document; resources none → DucHN |
| 40 | Create Work BreakDown Structure | 2015-05-15 → 2015-05-21 A (+6d) | 2015-05-19 → 2015-05-25 A (+6d) |  | 0% → 100% | 46.5d → none | 38 → 39 | was named Work BreakDown Structure; resources none → DucHN |
| 41 | Create Project schedule document | 2015-05-20 → 2015-05-26 A (+6d) | 2015-05-22 → 2015-05-28 A (+6d) |  | 0% → 100% | 46.5d → none |  | was named Create project schedule document; resources none → DucHN |
| 42 | Create CM Plan document | 2015-05-26 → 2015-05-29 A (+3d) | 2015-05-26 → 2015-05-29 A (+3d) |  | 0% → 100% | 46.5d → none | 39 → 41 | resources none → DucHN |
| 43 | Review & get comment of Project Plan | 2015-05-26 → 2015-05-29 A (+3d) | 2015-05-26 → 2015-05-29 A (+3d) |  | 0% → 100% | 46.5d → none |  | resources none → DucHN |
| 44 | Develop Risk Register | 2015-05-27 → 2015-06-01 A (+5d) | 2015-05-27 → 2015-06-01 A (+5d) |  | 0% → 100% | 47.5d → none |  | resources none → HieuTM |
| 45 | Update Project Plan documents (Schedule, Project Plan in MS Word, CM Plan) | 2015-05-27 → 2015-06-01 A (+5d) | 2015-05-27 → 2015-06-01 A (+5d) |  | 0% → 100% | 46.5d → none |  | resources none → DucHN |
| 46 | Create PP Review check list | 2015-05-28 → 2015-06-02 A (+5d) | 2015-05-28 → 2015-06-02 A (+5d) |  | 0% → 100% | 46.5d → none |  | resources none → ThuyLM |
| 47 | Summit Project Plan Final version | 2015-05-28 → 2015-06-02 A (+5d) | 2015-05-28 → 2015-06-02 A (+5d) |  | 0% → 100% | 46.5d → none | 46 → 46FS+0.5d |  |
| 48 | **Requirement** | 2015-05-13 → 2015-05-25 A (+12d) | 2015-05-18 → 2015-05-29 A (+11d) |  | 0% → 100% | 54d → none | none → 26 |  |
| 49 | **User Requirement** | 2015-05-13 → 2015-05-25 A (+12d) | 2015-05-14 → 2015-05-27 A (+13d) |  | 0% → 100% | 54d → none |  |  |
| 50 | Develop brief "User Requirements Specification" document | 2015-05-13 → 2015-05-25 A (+12d) | 2015-05-13 → 2015-05-26 A (+13d) |  | 0% → 100% | 54d → none |  | resources none → DocTeam |
| 51 | Peer review brief "User Requirements Specification" document | 2015-05-14 → 2015-05-26 A (+12d) | 2015-05-14 → 2015-05-26 A (+12d) |  | 0% → 100% | 54d → none |  | resources none → DocTeam |
| 52 | Update brief "User Requirements Specification" document | 2015-05-14 → 2015-05-27 A (+13d) | 2015-05-14 → 2015-05-27 A (+13d) |  | 0% → 100% | 54d → none |  | resources none → DocTeam |
| 53 | **Mock-up screens** | 2015-05-15 → 2015-05-27 A (+12d) | 2015-05-18 → 2015-05-29 A (+11d) |  | 0% → 100% | 54d → none |  |  |
| 54 | Collect business requirements and processes | 2015-05-13 → 2015-05-27 A (+14d) | 2015-05-13 → 2015-05-27 A (+14d) |  | 0% → 100% | 57.5d → none |  | resources none → TEAM |
| 55 | Develop main features' mockup screens | 2015-05-13 → 2015-05-28 A (+15d) | 2015-05-13 → 2015-05-28 A (+15d) |  | 0% → 100% | 57d → none | none → 54 | resources none → DevTeam |
| 56 | Review and edit screen main features' mockup screens | 2015-05-13 → 2015-05-29 A (+16d) | 2015-05-13 → 2015-05-29 A (+16d) |  | 0% → 100% | 57.5d → none | none → 55 | resources none → DevTeam |
| 57 | Complete main features' mockup screens | 2015-05-13 → 2015-05-29 A (+16d) | 2015-05-13 → 2015-05-29 A (+16d) |  | 0% → 100% | 58d → none | none → 56 |  |
| 58 | **Solution** | 2015-06-01 → 2015-06-03 A (+2d) | 2015-06-02 → 2015-07-07 A (+35d) | 1d? → 25d | 0% → 100% | 44d → none |  |  |
| 59 | **Sofware Requirement Specification** | 2015-06-02 → 2015-06-03 A (+1d) | 2015-06-02 → 2015-06-22 A (+20d) | 1d? → 14d | 0% → 100% | 44d → none |  |  |
| 60 | **Non-functional Requirements Specification** | 2015-06-02 → 2015-06-22 A (+20d) | 2015-06-02 → 2015-06-22 A (+20d) | 1d? → 1d | 0% → 100% | 44d → none | none → 72 |  |
| 61 | Develop User Interface requirements | 2015-06-02 → 2015-06-22 A (+20d) | 2015-06-02 → 2015-06-22 A (+20d) | 1d? → 1d | 0% → 100% | 44d → none |  |  |
| 62 | Develop Performance requirements | 2015-06-02 → 2015-06-22 A (+20d) | 2015-06-02 → 2015-06-22 A (+20d) | 1d? → 1d | 0% → 100% | 44d → none |  |  |
| 63 | **Functional Requirement Specification** | 2015-06-02 → 2015-06-03 A (+1d) | 2015-06-02 → 2015-06-19 A (+17d) | 1d? → 13d | 0% → 100% | 44d → none |  |  |
| 64 | **Part 1** | 2015-06-02 → 2015-06-03 A (+1d) | 2015-06-02 → 2015-06-09 A (+7d) | 1d? → 5d | 0% → 100% | 44d → none |  |  |
| 65 | Homepage Module | 2015-06-02 → 2015-06-03 A (+1d) | 2015-06-02 → 2015-06-04 A (+2d) | 1d? → 2d | 0% → 100% | 44d → none |  | resources none → DucHN |
| 66 | User personal page Module | 2015-06-02 → 2015-06-03 A (+1d) | 2015-06-02 → 2015-06-03 A (+1d) | 1d? → 1d | 0% → 100% | 44d → none |  | resources none → HoangNM |
| 67 | Admin Module | 2015-06-02 → 2015-06-04 A (+2d) | 2015-06-02 → 2015-06-04 A (+2d) | 1d? → 1d | 0% → 100% | 44d → none | none → 66 | resources none → HaiDT |
| 68 | Search Module | 2015-06-02 → 2015-06-04 A (+2d) | 2015-06-02 → 2015-06-04 A (+2d) | 1d? → 1d | 0% → 100% | 44d → none | none → 66 | resources none → DucHN |
| 69 | Login/Logout Module | 2015-06-02 → 2015-06-05 A (+3d) | 2015-06-02 → 2015-06-05 A (+3d) | 1d? → 1d | 0% → 100% | 44d → none | none → 68 | resources none → HoangNM |
| 70 | Friend Module | 2015-06-02 → 2015-06-05 A (+3d) | 2015-06-02 → 2015-06-08 A (+6d) | 1d? → 2d | 0% → 100% | 44d → none | none → 68 | resources none → HaiDT |
| 71 | Room module | 2015-06-02 → 2015-06-09 A (+7d) | 2015-06-02 → 2015-06-09 A (+7d) | 1d? → 1d | 0% → 100% | 44d → none | none → 70 | resources none → DucHN |

| ID | Task | Start | Finish | Duration | Complete | Total float | Predecessors | Other |
| --- | --- | --- | --- | --- | --- | --- | --- | --- |
| 72 | **Part 2** | 2015-06-02 → 2015-06-12 A (+10d) | 2015-06-02 → 2015-06-19 A (+17d) | 1d? → 6d | 0% → 100% | 44d → none | none → 64FS+2d |  |
| 73 | Suggestion Module | 2015-06-02 → 2015-06-12 A (+10d) | 2015-06-02 → 2015-06-12 A (+10d) | 1d? → 1d | 0% → 100% | 44d → none |  | resources none → HoangNM |
| 74 | Sharing Module | 2015-06-02 → 2015-06-12 A (+10d) | 2015-06-02 → 2015-06-12 A (+10d) | 1d? → 1d | 0% → 100% | 44d → none |  | resources none → HaiDT |
| 75 | Report Module | 2015-06-02 → 2015-06-15 A (+13d) | 2015-06-02 → 2015-06-15 A (+13d) | 1d? → 1d | 0% → 100% | 44d → none | none → 74 | resources none → DucHN |
| 76 | Planing Module | 2015-06-02 → 2015-06-15 A (+13d) | 2015-06-02 → 2015-06-17 A (+15d) | 1d? → 3d | 0% → 100% | 44d → none | none → 74 | was named Planing trip helper Module; resources none → HoangNM |
| 77 | Chat module | 2015-06-02 → 2015-06-18 A (+16d) | 2015-06-02 → 2015-06-19 A (+17d) | 1d? → 2d | 0% → 100% | 44d → none | none → 76 | resources none → HaiDT |
| 78 | **System Architectural Design** | 2015-06-02 → 2015-06-03 A (+1d) | 2015-06-02 → 2015-06-09 A (+7d) | 1d? → 5d | 0% → 100% | 44d → none |  |  |
| 79 | Define the system structure and unify system features | 2015-06-02 → 2015-06-03 A (+1d) | 2015-06-02 → 2015-06-04 A (+2d) | 1d? → 2d | 0% → 100% | 44d → none |  | resources none → HaiDT |
| 80 | Study the common System Architetures | 2015-06-02 → 2015-06-05 A (+3d) | 2015-06-02 → 2015-06-05 A (+3d) | 1d? → 1d | 0% → 100% | 44d → none | none → 79 | resources none → DucHN |
| 81 | Make choice of System Architeture | 2015-06-02 → 2015-06-08 A (+6d) | 2015-06-02 → 2015-06-08 A (+6d) | 1d? → 1d | 0% → 100% | 44d → none | none → 80 | resources none → DevTeam |
| 82 | Complete Architecture Design version 1.0 | 2015-06-02 → 2015-06-09 A (+7d) | 2015-06-02 → 2015-06-09 A (+7d) | 1d? → 0d | 0% → 100% | 44d → none | none → 81FS+1d |  |
| 83 | **Detailed Design** | 2015-06-02 → 2015-06-11 A (+9d) | 2015-06-02 → 2015-07-07 A (+35d) | 1d? → 19d | 0% → 100% | 44d → none | none → 78 |  |
| 84 | **Database design** | 2015-06-02 → 2015-06-22 A (+20d) | 2015-06-02 → 2015-06-26 A (+24d) | 1d? → 5d | 0% → 100% | 44d → none | none → 63 |  |
| 85 | Organize information to Database tables | 2015-06-02 → 2015-06-22 A (+20d) | 2015-06-02 → 2015-06-24 A (+22d) | 1d? → 3d | 0% → 100% | 44d → none |  | resources none → HaiDT |
| 86 | Define object in Database | 2015-06-02 → 2015-06-25 A (+23d) | 2015-06-02 → 2015-06-25 A (+23d) | 1d? → 1d | 0% → 100% | 44d → none | none → 85 | was named Define tables' relationships; resources none → HaiDT |
| 87 | Define relationships in Database | 2015-06-02 → 2015-06-26 A (+24d) | 2015-06-02 → 2015-06-26 A (+24d) | 1d? → 1d | 0% → 100% | 44d → none | none → 86 | was named Apply normalization rules to Database design; resources none → DucHN |
| 89 | **Screen design** | 2015-06-02 → 2015-06-11 A (+9d) | 2015-06-02 → 2015-06-15 A (+13d) | 1d? → 3d | 0% → 100% | 44d → none |  |  |
| 90 | Create Screen Flow diagram | 2015-06-02 → 2015-06-11 A (+9d) | 2015-06-02 → 2015-06-11 A (+9d) | 1d? → 1d | 0% → 100% | 44d → none | none → 78FS+1d | was named Create Screen Flow digram; resources none → HoangNM |
| 91 | Create Screen Definition | 2015-06-02 → 2015-06-12 A (+10d) | 2015-06-02 → 2015-06-12 A (+10d) | 1d? → 1d | 0% → 100% | 44d → none | none → 90 | resources none → HoangNM |
| 92 | Create Screen Design | 2015-06-02 → 2015-06-15 A (+13d) | 2015-06-02 → 2015-06-15 A (+13d) | 1d? → 1d | 0% → 100% | 44d → none | none → 91 | resources none → DevTeam |
| 93 | **Class/Component Design** | 2015-06-02 → 2015-07-01 A (+29d) | 2015-06-02 → 2015-07-07 A (+35d) | 1d? → 5d | 0% → 100% | 44d → none | none → 89 |  |
| 94 | Create Data models | 2015-06-02 → 2015-07-01 A (+29d) | 2015-06-02 → 2015-07-01 A (+29d) | 1d? → 1d | 0% → 100% | 44d → none | none → 84 | resources none → HaiDT |
| 95 | List components of the system | 2015-06-02 → 2015-07-02 A (+30d) | 2015-06-02 → 2015-07-02 A (+30d) | 1d? → 1d | 0% → 100% | 44d → none | none → 94 | resources none → DucHN |
| 96 | Break modules into classes | 2015-06-02 → 2015-07-03 A (+31d) | 2015-06-02 → 2015-07-03 A (+31d) | 1d? → 1d | 0% → 100% | 44d → none | none → 95 | resources none → DucHN |
| 97 | Create Class diagram | 2015-06-02 → 2015-07-06 A (+34d) | 2015-06-02 → 2015-07-07 A (+35d) | 1d? → 2d | 0% → 100% | 44d → none | none → 96 | resources none → HieuTM |
| 98 | Create Class description document | 2015-06-02 → 2015-07-06 A (+34d) | 2015-06-02 → 2015-07-06 A (+34d) | 1d? → 1d | 0% → 100% | 44d → none | none → 96 | resources none → HieuTM |
| 99 | Create Flow diagram | 2015-06-02 → 2015-07-03 A (+31d) | 2015-06-02 → 2015-07-03 A (+31d) | 1d? → 1d | 0% → 100% | 44d → none | none → 95 | resources none → HieuTM |
| 100 | Create Progress Report 2 | 2015-06-02 → 2015-07-06 A (+34d) | 2015-06-02 → 2015-07-06 A (+34d) | 1d? → 1d | 0% → 100% | 44d → none | none → 99 | resources none → DucHN |
| 101 | Create Design review checklists | 2015-06-02 → 2015-07-07 A (+35d) | 2015-06-02 → 2015-07-07 A (+35d) | 1d? → 1d | 0% → 100% | 44d → none | none → 100 | resources none → ThuyLM |
| 102 | **Project Management** | 2015-06-02 → 2015-06-10 A (+8d) | 2015-06-02 → 2015-06-11 A (+9d) | 1d? → 2d | 0% → 100% | 44d → none | none → 78 |  |
| 103 | Update project plan | 2015-06-02 → 2015-06-10 A (+8d) | 2015-06-02 → 2015-06-11 A (+9d) | 1d? → 2d | 0% → 100% | 44d → none |  | resources none → DucHN |
| 104 | Coding Center Helper Page | 2015-06-02 → 2015-06-10 A (+8d) | 2015-06-02 → 2015-06-11 A (+9d) | 1d? → 2d | 0% → 100% | 44d → none |  | was named Coding About/Contact Page; resources none → HoangNM |
| 105 | Coding Login with Facebook and Google+ feature | 2015-06-02 → 2015-06-10 A (+8d) | 2015-06-02 → 2015-06-10 A (+8d) | 1d? → 1d | 0% → 100% | 44d → none |  | resources none → HoangNM |
| 106 | **Test** | 2015-06-01 → 2015-06-03 A (+2d) | 2015-06-02 → 2015-06-11 A (+9d) | 1d? → 7d | 0% → 100% | 44d → none |  |  |
| 107 | Create Test plan | 2015-06-02 → 2015-06-03 A (+1d) | 2015-06-02 → 2015-06-05 A (+3d) | 1d? → 3d | 0% → 100% | 44d → none |  | resources none → ThuyLM |
| 108 | Review + Update Test plan | 2015-06-02 → 2015-06-08 A (+6d) | 2015-06-02 → 2015-06-08 A (+6d) | 1d? → 1d | 0% → 100% | 44d → none | none → 107 | resources none → LucPT |
| 109 | Test plan approved | 2015-06-01 → 2015-06-08 A (+7d) | 2015-06-01 → 2015-06-08 A (+7d) |  | 0% → 100% | 45d → none | none → 108 |  |
| 110 | Start writing Test cases | 2015-06-02 → 2015-06-09 A (+7d) | 2015-06-02 → 2015-06-11 A (+9d) | 1d? → 3d | 0% → 100% | 44d → none | none → 109 | resources none → DocTeam |
| 111 | **Construction** | 2015-06-23 → 2015-07-07 A (+14d) | 2015-08-04 → 2015-08-17 A (+13d) | 6w → 29d | 0% → 100% |  |  |  |
| 112 | **Design** | 2015-06-24 → 2015-07-08 A (+14d) | 2015-06-24 → 2015-07-10 A (+16d) | 1d → 3d | 0% → 100% | 29d → none |  |  |
| 113 | Refine Design document | 2015-06-24 → 2015-07-08 A (+14d) | 2015-06-24 → 2015-07-10 A (+16d) | 1d → 3d | 0% → 100% | 29d → none |  | resources none → HaiDT |
| 114 | **Coding** | 2015-06-23 → 2015-07-16 A (+23d) | 2015-06-24 → 2015-08-13 A (+50d) | 1d? → 21d | 0% → 100% | 29d → none | none → 112FS+3d |  |
| 115 | Build prototype | 2015-06-24 → 2015-07-16 A (+22d) | 2015-06-24 → 2015-07-17 A (+23d) | 1d → 2d | 0% → 100% | 29d → none |  | resources none → DevTeam |
| 116 | Prototype approved | 2015-06-23 → 2015-07-17 A (+24d) | 2015-06-23 → 2015-07-17 A (+24d) |  | 0% → 100% | 30d → none | none → 115 |  |
| 117 | **Coding product (Continue)** | 2015-06-24 → 2015-07-20 A (+26d) | 2015-06-24 → 2015-08-11 A (+48d) | 1d? → 17d | 0% → 100% | 29d → none | none → 116 |  |
| 118 | Develop UI | 2015-06-24 → 2015-07-20 A (+26d) | 2015-06-24 → 2015-07-24 A (+30d) | 1d → 1w | 0% → 100% | 29d → none |  | resources none → DucHN |
| 119 | Develop objects | 2015-06-24 → 2015-07-20 A (+26d) | 2015-06-24 → 2015-07-21 A (+27d) | 1d → 2d | 0% → 100% | 29d → none | none → 118SS | resources none → HaiDT |
| 120 | Create system documentation | 2015-06-24 → 2015-07-20 A (+26d) | 2015-06-24 → 2015-07-20 A (+26d) |  | 0% → 100% | 29d → none | none → 119SS | resources none → HoangNM |
| 121 | **Coding Modules** | 2015-06-24 → 2015-07-23 A (+29d) | 2015-06-24 → 2015-08-11 A (+48d) | 1d? → 14d | 0% → 100% | 29d → none | none → 119FS+1d |  |
| 122 | **Part 1** | 2015-06-24 → 2015-07-23 A (+29d) | 2015-06-24 → 2015-08-04 A (+41d) | 1d? → 9d | 0% → 100% | 29d → none |  |  |
| 123 | Homepage Module | 2015-06-24 → 2015-07-23 A (+29d) | 2015-06-24 → 2015-07-27 A (+33d) | 1d? → 3d | 0% → 100% | 29d → none |  | resources none → DucHN |
| 124 | User personal page Module | 2015-06-24 → 2015-07-23 A (+29d) | 2015-06-24 → 2015-07-24 A (+30d) | 1d? → 2d | 0% → 100% | 29d → none | none → 123SS | resources none → HaiDT |
| 125 | Admin Module | 2015-06-24 → 2015-07-23 A (+29d) | 2015-06-24 → 2015-07-24 A (+30d) | 1d? → 2d | 0% → 100% | 29d → none | none → 123SS | resources none → HoangNM |
| 126 | Search Module | 2015-06-24 → 2015-07-28 A (+34d) | 2015-06-24 → 2015-07-30 A (+36d) | 1d? → 3d | 0% → 100% | 29d → none | none → 123 | resources none → DucHN |
| 127 | Login/Logout Module | 2015-06-24 → 2015-07-27 A (+33d) | 2015-06-24 → 2015-07-27 A (+33d) | 1d? → 0.5d | 0% → 100% | 29d → none | none → 124 | resources none → HaiDT |
| 128 | Friend Module | 2015-06-24 → 2015-07-27 A (+33d) | 2015-06-24 → 2015-07-28 A (+34d) | 1d? → 2d | 0% → 100% | 29d → none | none → 125 | resources none → HoangNM |
| 129 | Room module | 2015-06-24 → 2015-07-31 A (+37d) | 2015-06-24 → 2015-08-04 A (+41d) | 1d? → 3d | 0% → 100% | 29d → none | none → 126 | resources none → DucHN |
| 130 | **Part 2** | 2015-06-24 → 2015-08-06 A (+43d) | 2015-06-24 → 2015-08-11 A (+48d) | 1d? → 4d | 0% → 100% | 29d → none | none → 122FS+1d |  |
| 131 | Suggestion Module | 2015-06-24 → 2015-08-06 A (+43d) | 2015-06-24 → 2015-08-07 A (+44d) | 1d? → 2d | 0% → 100% | 29d → none | none → 127 | resources none → HaiDT |
| 132 | Sharing Module | 2015-06-24 → 2015-08-06 A (+43d) | 2015-06-24 → 2015-08-06 A (+43d) | 1d? → 0.5d | 0% → 100% | 29d → none | none → 128 | resources none → HoangNM |
| 133 | Report Module | 2015-06-24 → 2015-08-06 A (+43d) | 2015-06-24 → 2015-08-06 A (+43d) | 1d? → 0.5d | 0% → 100% | 29d → none | none → 129 | resources none → DucHN |
| 134 | Chat module | 2015-06-24 → 2015-08-10 A (+47d) | 2015-06-24 → 2015-08-11 A (+48d) | 1d? → 2d | 0% → 100% | 29d → none | none → 131 | resources none → HaiDT |
| 135 | Planning Module | 2015-06-24 → 2015-08-06 A (+43d) | 2015-06-24 → 2015-08-11 A (+48d) | 1d? → 3d | 0% → 100% | 29d → none | none → 132 | was named Planing trip helper Module; resources none → HoangNM |
| 136 | Product development completes | 2015-06-23 → 2015-08-13 A (+51d) | 2015-06-23 → 2015-08-13 A (+51d) |  | 0% → 100% | 30d → none | none → 121FS+2d |  |
| 137 | **Testing** | 2015-06-23 → 2015-07-07 A (+14d) | 2015-06-24 → 2015-08-17 A (+54d) | 1d? → 29d | 0% → 100% | 29d → none | none → 106 |  |
| 138 | **Writing Test cases (Continue)** | 2015-06-24 → 2015-07-08 A (+14d) | 2015-06-24 → 2015-07-23 A (+29d) | 1d? → 12d | 0% → 100% | 29d → none |  |  |
| 139 | Create Integration Test Case | 2015-06-24 → 2015-07-08 A (+14d) | 2015-06-24 → 2015-07-10 A (+16d) | 1d? → 3d | 0% → 100% | 29d → none |  | resources none → ThuyLM |
| 140 | Update and review Integration Test Case | 2015-06-24 → 2015-07-15 A (+21d) | 2015-06-24 → 2015-07-16 A (+22d) | 1d? → 2d | 0% → 100% | 29d → none | none → 139FS+2d | resources none → HieuTM |
| 141 | Create System Test Case | 2015-06-24 → 2015-07-17 A (+23d) | 2015-06-24 → 2015-07-21 A (+27d) | 1d? → 3d | 0% → 100% | 29d → none | none → 140 | resources none → DocTeam |
| 142 | Update and review System Test Case | 2015-06-24 → 2015-07-22 A (+28d) | 2015-06-24 → 2015-07-23 A (+29d) | 1d? → 2d | 0% → 100% | 29d → none | none → 141 | resources none → DocTeam |

| ID | Task | Start | Finish | Duration | Complete | Total float | Predecessors | Other |
| --- | --- | --- | --- | --- | --- | --- | --- | --- |
| 143 | Writing Test cases completes | 2015-06-23 → 2015-07-07 A (+14d) | 2015-06-23 → 2015-07-07 A (+14d) |  | 0% → 100% | 30d → none |  |  |
| 144 | **Execute Test** | 2015-06-23 → 2015-07-24 A (+31d) | 2015-06-24 → 2015-08-17 A (+54d) | 1d? → 17d | 0% → 100% | 29d → none | none → 138 |  |
| 145 | **Execute Test Part 1** | 2015-06-24 → 2015-07-24 A (+30d) | 2015-06-24 → 2015-08-04 A (+41d) | 1d? → 8d | 0% → 100% | 29d → none |  |  |
| 146 | Execute Component Test | 2015-06-24 → 2015-07-24 A (+30d) | 2015-06-24 → 2015-07-27 A (+33d) | 1d? → 2d | 0% → 100% | 29d → none |  | resources none → DocTeam |
| 147 | Fix bug Component Test | 2015-06-24 → 2015-07-28 A (+34d) | 2015-06-24 → 2015-07-29 A (+35d) | 1d? → 2d | 0% → 100% | 29d → none | none → 146 | resources none → DocTeam |
| 148 | Execute Integration Test | 2015-06-24 → 2015-07-28 A (+34d) | 2015-06-24 → 2015-07-29 A (+35d) | 1d? → 2d | 0% → 100% | 29d → none | none → 146 | resources none → DocTeam |
| 149 | Fix bug Integration Test | 2015-06-24 → 2015-07-30 A (+36d) | 2015-06-24 → 2015-07-31 A (+37d) | 1d? → 2d | 0% → 100% | 29d → none | none → 148 | resources none → DocTeam |
| 150 | Execute System Test | 2015-06-24 → 2015-07-30 A (+36d) | 2015-06-24 → 2015-07-31 A (+37d) | 1d? → 2d | 0% → 100% | 29d → none | none → 148 | resources none → DocTeam |
| 151 | Fix bug System Test | 2015-06-24 → 2015-08-03 A (+40d) | 2015-06-24 → 2015-08-04 A (+41d) | 1d? → 2d | 0% → 100% | 29d → none | none → 150 | resources none → DocTeam |
| 152 | **Execute Test Part 2** | 2015-06-24 → 2015-08-05 A (+42d) | 2015-06-24 → 2015-08-14 A (+51d) | 1d? → 8d | 0% → 100% | 29d → none | none → 145 |  |
| 153 | Execute Component Test | 2015-06-24 → 2015-08-05 A (+42d) | 2015-06-24 → 2015-08-06 A (+43d) | 1d? → 2d | 0% → 100% | 29d → none |  | resources none → DocTeam |
| 154 | Fix bug Component Test | 2015-06-24 → 2015-08-07 A (+44d) | 2015-06-24 → 2015-08-10 A (+47d) | 1d? → 2d | 0% → 100% | 29d → none | none → 153 | resources none → DocTeam |
| 155 | Execute Integration Test | 2015-06-24 → 2015-08-07 A (+44d) | 2015-06-24 → 2015-08-10 A (+47d) | 1d? → 2d | 0% → 100% | 29d → none | none → 153 | resources none → DocTeam |
| 156 | Fix bug Integration Test | 2015-06-24 → 2015-08-11 A (+48d) | 2015-06-24 → 2015-08-12 A (+49d) | 1d? → 2d | 0% → 100% | 29d → none | none → 155 | resources none → DocTeam |
| 157 | Execute System Test | 2015-06-24 → 2015-08-11 A (+48d) | 2015-06-24 → 2015-08-12 A (+49d) | 1d? → 2d | 0% → 100% | 29d → none | none → 155 | resources none → DocTeam |
| 158 | Fix bug System Test | 2015-06-24 → 2015-08-13 A (+50d) | 2015-06-24 → 2015-08-14 A (+51d) | 1d? → 2d | 0% → 100% | 29d → none | none → 157 | resources none → DocTeam |
| 159 | Create Test Report first verstion | 2015-06-24 → 2015-08-17 A (+54d) | 2015-06-24 → 2015-08-17 A (+54d) | 1d? → 1d | 0% → 100% | 29d → none | none → 158 | resources none → DocTeam |
| 160 | Complete Testing | 2015-06-23 → 2015-08-17 A (+55d) | 2015-06-23 → 2015-08-17 A (+55d) |  | 0% → 100% | 30d → none | none → 159 |  |
| 161 | **User Manual** | 2015-06-24 → 2015-08-14 A (+51d) | 2015-06-24 → 2015-08-17 A (+54d) | 1d? → 2d | 0% → 100% | 29d → none | none → 114 |  |
| 162 | Create Installation guideline | 2015-06-24 → 2015-08-14 A (+51d) | 2015-06-24 → 2015-08-14 A (+51d) | 1d? → 1d | 0% → 100% | 29d → none |  | resources none → DucHN |
| 163 | Create User guideline | 2015-06-24 → 2015-08-14 A (+51d) | 2015-06-24 → 2015-08-14 A (+51d) | 1d? → 1d | 0% → 100% | 29d → none | none → 162SS | resources none → HaiDT |
| 164 | Review + Update guidelines | 2015-06-24 → 2015-08-17 A (+54d) | 2015-06-24 → 2015-08-17 A (+54d) | 1d? → 1d | 0% → 100% | 29d → none | none → 163 | resources none → DucHN |
| 165 | **Manage development** | 2015-06-24 → 2015-07-16 A (+22d) | 2015-06-24 → 2015-07-22 A (+28d) | 1d? → 5d | 0% → 100% | 29d → none | none → 114SS |  |
| 166 | **Manage scope/cost/time** | 2015-06-24 → 2015-07-16 A (+22d) | 2015-06-24 → 2015-07-22 A (+28d) | 1d? → 5d | 0% → 100% | 29d → none |  |  |
| 167 | Monitor product changes | 2015-06-24 → 2015-07-16 A (+22d) | 2015-06-24 → 2015-07-22 A (+28d) | 1d? → 1w | 0% → 100% | 29d → none |  | resources none → DucHN |
| 168 | Monitor project changes | 2015-06-24 → 2015-07-16 A (+22d) | 2015-06-24 → 2015-07-22 A (+28d) | 1d? → 1w | 0% → 100% | 29d → none |  | resources none → DucHN |
| 169 | **Manage communications** | 2015-06-24 → 2015-07-16 A (+22d) | 2015-06-24 → 2015-07-16 A (+22d) | 1d? → 1d | 0% → 100% | 29d → none |  |  |
| 170 | **Implement communications methods and strategies** | 2015-06-24 → 2015-07-16 A (+22d) | 2015-06-24 → 2015-07-16 A (+22d) | 1d? → 1d | 0% → 100% | 29d → none |  |  |
| 171 | Select tools | 2015-06-24 → 2015-07-16 A (+22d) | 2015-06-24 → 2015-07-16 A (+22d) | 1d? → 1d | 0% → 100% | 29d → none |  | resources none → DucHN |
| 172 | **Distribute information** | 2015-06-24 → 2015-07-16 A (+22d) | 2015-06-24 → 2015-07-16 A (+22d) | 1d? → 1d | 0% → 100% | 29d → none |  |  |
| 173 | Attend team meeting | 2015-06-24 → 2015-07-16 A (+22d) | 2015-06-24 → 2015-07-16 A (+22d) |  | 0% → 100% | 29d → none |  | resources none → TEAM |
| 174 | Create status reports | 2015-06-24 → 2015-07-16 A (+22d) | 2015-06-24 → 2015-07-16 A (+22d) |  | 0% → 100% | 29d → none |  | resources none → HoangNM |
| 175 | Create Weekly Report | 2015-06-24 → 2015-07-16 A (+22d) | 2015-06-24 → 2015-07-16 A (+22d) | 1d? → 1d | 0% → 100% | 29d → none |  | resources none → DucHN |
| 176 | Resolve communications problems | 2015-06-24 → 2015-07-16 A (+22d) | 2015-06-24 → 2015-07-16 A (+22d) |  | 0% → 100% | 29d → none |  | resources none → DucHN |
| 177 | **Manage quality control** | 2015-06-24 → 2015-07-16 A (+22d) | 2015-06-24 → 2015-07-16 A (+22d) |  | 0% → 100% | 29d → none |  |  |
| 178 | Monitor product quality | 2015-06-24 → 2015-07-16 A (+22d) | 2015-06-24 → 2015-07-16 A (+22d) |  | 0% → 100% | 29d → none |  | resources none → DucHN |
| 179 | **Monitor project quality** | 2015-06-24 → 2015-07-16 A (+22d) | 2015-06-24 → 2015-07-16 A (+22d) |  | 0% → 100% | 29d → none |  |  |
| 180 | Implement process improvements | 2015-06-24 → 2015-07-16 A (+22d) | 2015-06-24 → 2015-07-16 A (+22d) |  | 0% → 100% | 29d → none |  | resources none → DucHN |
| 181 | **Manage risk** | 2015-06-24 → 2015-07-16 A (+22d) | 2015-06-24 → 2015-07-16 A (+22d) |  | 0% → 100% | 29d → none |  |  |
| 182 | Monitor risks | 2015-06-24 → 2015-07-16 A (+22d) | 2015-06-24 → 2015-07-16 A (+22d) |  | 0% → 100% | 29d → none |  | resources none → DucHN |
| 183 | Specify responses | 2015-06-24 → 2015-07-16 A (+22d) | 2015-06-24 → 2015-07-16 A (+22d) |  | 0% → 100% | 29d → none |  | resources none → DucHN |
| 184 | Manage integration | 2015-06-24 → 2015-07-16 A (+22d) | 2015-06-24 → 2015-07-16 A (+22d) |  | 0% → 100% | 29d → none |  | resources none → DucHN |
| 185 | **Termination** | 2015-08-05 → 2015-08-18 A (+13d) | 2015-08-18 → 2015-08-26 A (+8d) | 2w → 7d | 0% → 100% |  |  |  |
| 186 | **Pre-Closing** | 2015-08-05 → 2015-08-18 A (+13d) | 2015-08-05 → 2015-08-19 A (+14d) | 1d → 2d | 0% → 100% | 9d → none |  |  |
| 187 | Training presentation | 2015-08-05 → 2015-08-18 A (+13d) | 2015-08-05 → 2015-08-19 A (+14d) | 1d → 2d | 0% → 100% | 9d → none |  | resources none → TEAM |
| 188 | **Closing** | 2015-08-05 → 2015-08-21 A (+16d) | 2015-08-05 → 2015-08-26 A (+21d) | 1d → 4d | 0% → 100% | 9d → none | none → 186FS+1d |  |
| 189 | Prepare for presentation | 2015-08-05 → 2015-08-21 A (+16d) | 2015-08-05 → 2015-08-25 A (+20d) | 1d → 3d | 0% → 100% | 9d → none |  | resources none → TEAM |
| 190 | Represent Capstone Project and Completed | 2015-08-05 → 2015-08-26 A (+21d) | 2015-08-05 → 2015-08-26 A (+21d) |  | 0% → 100% | 9d → none | none → 189 | constraint none → finish no earlier than 2015-08-26; resources none → TEAM |
